# Stargazer

How a schedule from MS Project changed from version to version. A marks actual dates.

## Version 1 (saved 2010-03-26)

Note of the change: updates to plans

| ID | WBS | Task | Duration | Start | Finish | Predecessors | Complete | Total float | Constraint |
| --- | --- | --- | --- | --- | --- | --- | --- | --- | --- |
| 1 | 1 | **Iteration 8: Image Capturing: (Total: units)** | 27.62d? | 2010-01-06 14:30 A | 2010-03-31 15:00 |  | 4% | 0d |  |
| 2 | 1.1 | **Business Modeling: (Total: unit)** | 0.06d | 2010-03-13 08:00 A | 2010-03-13 08:15 A |  | 100% |  |  |
| 3 |  | Update vision to coincide with changes | 15min | 2010-03-13 08:00 A | 2010-03-13 08:15 A |  | 100% |  | start no earlier than 2010-03-12 08:00 |
| 4 | 1.2 | **Implementation: (Total: units)** | 24.69d? | 2010-01-06 16:00 A | 2010-03-22 15:15 |  |  | 2.56d |  |
| 5 |  | Web system | 1d? | 2010-03-04 08:00 A | 2010-03-04 18:30 |  |  | 9.12d |  |
| 6 | 1.2.2 | **Telescope-Controlling Application** | 24.69d | 2010-01-06 16:00 | 2010-03-22 15:15 |  |  | 2.56d |  |
| 7 | 1.2.2.1 | **A Test Program** | 7.5d | 2010-01-06 16:00 | 2010-01-28 18:30 |  |  | 19.75d |  |
| 8 |  | Create test program to communicate with the camera and take a picture | 4d | 2010-01-06 16:00 | 2010-01-20 15:00 | 28 |  | 19.75d |  |
| 9 |  | Test getting and setting parameters of the camera | 1d | 2010-01-20 15:00 | 2010-01-21 17:00 | 8, 28 |  | 22.25d |  |
| 10 |  | Allow input for selected parameters | 1d | 2010-01-20 15:00 | 2010-01-21 17:00 | 8 |  | 19.75d |  |
| 11 |  | Set parameters based on inputs | 1.5d | 2010-01-21 17:00 | 2010-01-27 16:30 | 8, 10, 28 |  | 19.75d |  |
| 12 |  | Add error checking | 1d | 2010-01-28 14:30 | 2010-01-28 18:30 | 8, 10, 11, 28 |  | 19.75d |  |
| 13 | 1.2.2.2 | **Integration with Telescope Controlling Application** | 0.31d | 2010-03-22 14:00 | 2010-03-22 15:15 |  |  | 2.56d |  |
| 14 |  | Migrate source code to telescope control app | 0.25h | 2010-03-22 14:00 | 2010-03-22 14:15 |  |  | 2.56d | start no earlier than 2010-03-19 08:00 |
| 15 |  | Clean up camera code and convert it to a method | 0.5h | 2010-03-22 14:15 | 2010-03-22 14:45 | 14 |  | 2.56d |  |
| 16 |  | Modify main method to pass camera settings to camera method | 0.5h | 2010-03-22 14:45 | 2010-03-22 15:15 | 15 |  | 2.56d |  |
| 17 | 1.3 | **Testing: (Total: units)** | 10.12d | 2010-03-04 14:30 A | 2010-03-31 15:00 |  | 26% | 0d |  |
| 18 |  | Draft acceptance test | 1h | 2010-03-04 14:30 | 2010-03-04 15:30 |  |  | 9.88d | start no earlier than 2010-03-04 08:00 |
| 19 | 1.3.2 | **Web system** | 0.75d | 2010-03-26 08:00 A | 2010-03-31 15:00 |  | 50% | 0d |  |
| 20 |  | Fix issue with testing environment | 3h | 2010-03-26 08:00 A | 2010-03-31 15:00 |  | 50% | 0d |  |
| 21 | 1.3.3 | **Telescope-Controlling Application** | 0.31d | 2010-03-29 14:00 | 2010-03-29 15:15 |  |  | 0.44d |  |
| 22 |  | Create camera test method | 0.25h | 2010-03-29 14:00 | 2010-03-29 14:15 |  |  | 0.44d | start no earlier than 2010-03-29 08:00 |
| 23 |  | Accept inputs from telescope control app | 0.25h | 2010-03-29 14:15 | 2010-03-29 14:30 | 22 |  | 0.62d |  |
| 24 |  | Output a test image | 0.25h | 2010-03-29 14:15 | 2010-03-29 14:30 | 22 |  | 0.62d |  |
| 25 |  | Simulate camera commands | 1h | 2010-03-29 14:15 | 2010-03-29 15:15 | 22 |  | 0.44d |  |
| 26 | 1.4 | **Analysis and Design: (Total: units)** | 27.5d? | 2010-01-06 14:30 A | 2010-03-31 08:00 |  |  | 0.12d |  |
| 27 |  | Create PowerPoint for final presentation | 1d? | 2010-03-25 14:30 | 2010-03-25 18:30 |  |  | 0.75d | start no earlier than 2010-03-25 08:00 |
| 28 |  | Read camera documentation | 1.5h | 2010-01-06 14:30 | 2010-01-06 16:00 |  |  | 19.75d |  |
| 29 |  | All documentation finished | 0d | 2010-03-31 08:00 A | 2010-03-31 08:00 A | 18 | 100% |  | start no earlier than 2010-03-13 08:00 |
| 30 | 1.5 | **Deployment: (Total: unit)** | 0.06d | 2010-03-13 08:00 A | 2010-03-13 08:15 A |  | 100% |  |  |
| 31 |  | Deploy latest versions of web application to production | 15min | 2010-03-13 08:00 A | 2010-03-13 08:15 A |  | 100% |  | start no earlier than 2010-03-12 08:00 |
| 32 |  | Release #8: Image Capturing | 0d | 2010-03-13 08:00 A | 2010-03-13 08:00 A | 5 | 100% |  | start no earlier than 2010-03-13 08:00 |

## Version 2 (saved 2010-03-29)

Note of the change: docs for meeting 5

Last finish stays 2010-03-31.

Added:

| ID | Task | Duration | Start | Finish | Resources |
| --- | --- | --- | --- | --- | --- |
| 6 | Create batch file to allow images to be POST'ed to the web server | 3h | 2010-01-06 14:30 | 2010-01-07 15:30 | Rob |
| 7 | Make changes to triggers and batch files to handle extra camera-related inputs to telescope-controlling application | 1h | 2010-01-06 14:30 | 2010-01-06 15:30 | Rob |
| 29 | Create detailed plan for next iteration | 2h | 2010-01-06 14:30 | 2010-01-06 16:30 | Rob |

Changed:

| ID | Task | Start | Finish | Duration | Complete | Total float | Other |
| --- | --- | --- | --- | --- | --- | --- | --- |
| 1 | **Iteration 8: Image Capturing: (Total: units)** |  |  | 27.62d? → 27.62d | 4% → 8% |  | resources none → Rob |
| 4 | **Implementation: (Total: units)** | 2010-01-06 16:00 A → 2010-01-06 14:30 |  | 24.69d? → 25.06d |  |  |  |
| 5 | **Web system** | 2010-03-04 08:00 A → 2010-01-06 14:30 (-57d) | 2010-03-04 18:30 → 2010-01-07 15:30 (-56d) | 1d? → 0.75d |  | 9.12d → 26.88d |  |
| 8 | **Telescope-Controlling Application** | 2010-01-06 16:00 → 2010-01-06 15:15 |  | 24.69d → 24.88d |  |  |  |
| 9 | **A Test Program** | 2010-01-06 16:00 → 2010-01-06 15:15 | 2010-01-28 18:30 → 2010-01-11 16:15 (-17d) | 7.5d → 1.88d |  | 19.75d → 25.56d |  |
| 10 | Create test program to communicate with the camera and take a picture | 2010-01-06 16:00 → 2010-01-06 15:15 | 2010-01-20 15:00 → 2010-01-07 17:15 (-13d) | 4d → 4h |  | 19.75d → 25.56d |  |
| 11 | Test getting and setting parameters of the camera | 2010-01-20 15:00 → 2010-01-07 17:15 (-13d) | 2010-01-21 17:00 → 2010-01-07 18:15 (-14d) | 1d → 1h |  | 22.25d → 26.19d |  |
| 12 | Allow input for selected parameters | 2010-01-20 15:00 → 2010-01-07 17:15 (-13d) | 2010-01-21 17:00 → 2010-01-07 18:15 (-14d) | 1d → 1h |  | 19.75d → 25.56d |  |
| 13 | Set parameters based on inputs | 2010-01-21 17:00 → 2010-01-07 18:15 (-14d) | 2010-01-27 16:30 → 2010-01-11 15:15 (-16d) | 1.5d → 1.5h |  | 19.75d → 25.56d |  |
| 14 | Add error checking | 2010-01-28 14:30 → 2010-01-11 15:15 (-17d) | 2010-01-28 18:30 → 2010-01-11 16:15 (-17d) | 1d → 1h |  | 19.75d → 25.56d |  |
| 28 | **Analysis and Design: (Total: units)** |  |  | 27.5d? → 27.5d |  |  |  |
| 30 | Create PowerPoint for final presentation |  | 2010-03-25 18:30 → 2010-03-25 16:30 | 1d? → 2h |  | 0.75d → 1.25d | resources none → Rob |
| 31 | Read camera documentation |  | 2010-01-06 16:00 → 2010-01-06 15:15 | 1.5h → 0.75h |  | 19.75d → 25.56d | resources Robert → Robert; Rob |

## Version 3 (saved 2010-04-01)

Note of the change: updated docs for meeting 5

Last finish stays 2010-03-31. Complete tasks 4 → 3.

Added:

| ID | Task | Duration | Start | Finish | Resources |
| --- | --- | --- | --- | --- | --- |
| 30 | Update wiki | 1.5h | 2010-01-06 14:30 | 2010-01-06 16:00 | Rob |

Removed: 3 Update vision to coincide with changes; 20 Draft acceptance test

Changed:

| ID | Task | Start | Finish | Duration | Complete | Total float | Predecessors | Other |
| --- | --- | --- | --- | --- | --- | --- | --- | --- |
| 1 | **Iteration 8: Image Capturing: (Total: 100 units)** |  |  |  | 8% → 7% |  |  | was named Iteration 8: Image Capturing: (Total: units) |
| 2 | Business Modeling: (Total: 0 units) |  | 2010-03-13 08:15 A → 2010-03-13 08:15 |  | 100% → 0% | none → 6.94d |  | was named Business Modeling: (Total: unit) |
| 3 | **Implementation: (Total: 55 units)** |  |  |  |  |  |  | was named Implementation: (Total: units) |
| 18 | **Testing: (Total: 19 units)** | 2010-03-04 14:30 A → 2010-03-26 08:00 A (+22d) |  | 10.12d → 0.75d | 26% → 32% |  |  | was named Testing: (Total: units) |
| 26 | **Analysis and Design: (Total: 25 units)** |  |  |  |  |  |  | was named Analysis and Design: (Total: units) |
| 27 | Create detailed plan |  |  |  |  |  |  | was named Create detailed plan for next iteration |
| 31 | All documentation finished |  |  |  |  |  | Draft acceptance test → none |  |
| 32 | **Deployment: (Total: 1 unit)** |  |  |  |  |  |  | was named Deployment: (Total: unit) |
