# Stargazer

How a schedule from MS Project changed from version to version. A marks actual dates.

## Version 1 (saved 2010-04-04)

Note of the change: updated docs for meeting 5

| ID | WBS | Task | Duration | Start | Finish | Predecessors | Complete | Total float | Constraint |
| --- | --- | --- | --- | --- | --- | --- | --- | --- | --- |
| 1 | 1 | **Iteration 5: Automated Scheduling and Telescope Positioning: (Total 105 units)** | 9d | 2010-01-06 14:30 A | 2010-02-04 08:00 A |  | 100% |  |  |
| 2 | 1.1 | **Business Modelling: (Total 1 unit)** | 0.06d | 2010-01-06 14:30 A | 2010-01-06 14:45 A |  | 100% |  |  |
| 3 |  | Update vision | 15min | 2010-01-06 14:30 A | 2010-01-06 14:45 A |  | 100% |  |  |
| 4 | 1.2 | **Implementation: (Total 53 units)** | 4.62d | 2010-01-06 14:30 A | 2010-01-20 16:00 A |  | 100% |  |  |
| 5 | 1.2.1 | **Web system** | 4.62d | 2010-01-06 14:30 A | 2010-01-20 16:00 A |  | 100% |  |  |
| 6 |  | Add new online help documentation to website | 3h | 2010-01-11 14:00 A | 2010-01-13 15:00 A |  | 100% |  | start no earlier than 2010-01-11 08:00 |
| 7 |  | Fix CSS with mobile devices | 15min | 2010-01-07 14:30 A | 2010-01-07 14:45 A |  | 100% |  | start no earlier than 2010-01-07 08:00 |
| 8 |  | Minor refactoring | 1.5h | 2010-01-07 14:30 A | 2010-01-07 16:00 A |  | 100% |  | start no earlier than 2010-01-07 08:00 |
| 9 |  | Download and install Oracle 10g XE on telescope server | 1.5h | 2010-01-14 14:30 A | 2010-01-14 16:00 A |  | 100% |  | start no earlier than 2010-01-14 08:00 |
| 10 |  | Install Oracle client on web server | 1h | 2010-01-06 14:30 A | 2010-01-06 15:30 A |  | 100% |  |  |
| 11 |  | Configure Rails environment to now use the Oracle 10g XE database | 1h | 2010-01-14 16:00 A | 2010-01-14 17:00 A | 9 | 100% |  | start no earlier than 2010-01-14 08:00 |
| 12 |  | Create triggers/batch file to run application | 2h | 2010-01-18 16:00 A | 2010-01-20 16:00 A |  | 100% |  |  |
| 13 | 1.2.2 | **Telescope-controlling application** | 0.75d | 2010-01-14 14:30 A | 2010-01-14 17:30 A |  | 100% |  |  |
| 14 |  | Allow for parking the telescope | 1h | 2010-01-14 14:30 A | 2010-01-14 15:30 A |  | 100% |  | start no earlier than 2010-01-14 08:00 |
| 15 |  | Allow for telescope movement ability from entered celestial coordinates | 2h | 2010-01-14 15:30 A | 2010-01-14 17:30 A | 14 | 100% |  | start no earlier than 2010-01-14 08:00 |
| 16 | 1.3 | **Testing: (Total 16 units)** | 4.12d | 2010-01-06 14:30 A | 2010-01-18 16:00 A |  | 100% |  |  |
| 17 |  | Test connections and scheduling jobs | 2h | 2010-01-18 14:00 A | 2010-01-18 16:00 A | 11 | 100% |  | start no earlier than 2010-01-18 08:00 |
| 18 |  | Test driver for all commands | 2h | 2010-01-06 14:30 A | 2010-01-06 16:30 A |  | 100% |  |  |
| 19 | 1.4 | **Analysis and Design: (Total 34 units)** | 2d | 2010-01-06 14:30 A | 2010-01-11 16:00 A |  | 100% |  |  |
| 20 |  | Research Rails plugin to handle scheduling | 2h | 2010-01-11 14:00 A | 2010-01-11 16:00 A |  | 100% |  | start no earlier than 2010-01-11 08:00 |
| 21 |  | Documentation updates | 5h | 2010-01-06 14:30 A | 2010-01-07 17:30 A |  | 100% |  |  |
| 22 |  | Metrics gathering | 1.5h | 2010-01-06 14:30 A | 2010-01-06 16:00 A |  | 100% |  |  |
| 23 | 1.5 | **Deployment: (Total 1 unit)** | 0.06d | 2010-02-02 08:00 A | 2010-02-03 14:45 A |  | 100% |  |  |
| 24 |  | Deploy in production environment | 15min | 2010-02-02 08:00 A | 2010-02-03 14:45 A |  | 100% |  |  |
| 25 |  | Release #5: Automated Scheduling and Telescope Positioning | 0d | 2010-02-04 08:00 A | 2010-02-04 08:00 A | 5, 13, 19 | 100% |  | start no earlier than 2010-02-04 08:00 |
| 27 | 2 | **Iteration 6: Libraries and GUI Enhancements: (Total 130 units)** | 7d | 2010-02-04 14:30 A | 2010-02-25 17:00 A | 1 | 100% |  |  |
| 28 | 2.1 | **Implementation: (Total: 97 units)** | 7d | 2010-02-04 14:30 A | 2010-02-25 17:00 A |  | 100% |  |  |
| 29 | 2.1.1 | **Web system** | 7d | 2010-02-04 14:30 A | 2010-02-25 17:00 A |  | 100% |  |  |
| 30 |  | Integrate libraries (which have celestial objects of interest) to web site | 6h | 2010-02-04 14:30 A | 2010-02-08 16:00 A |  | 100% |  |  |
| 31 |  | Add scheduled job for parking telescope | 5h | 2010-02-22 16:00 A | 2010-02-25 17:00 A | 30, 14 | 100% |  | finish no earlier than 2010-02-25 17:00 |
| 32 |  | Telescope parking completed | 0d | 2010-02-25 17:00 A | 2010-02-25 17:00 A | 31 | 100% |  | start no earlier than 2010-03-01 08:00 |
| 33 |  | Add pagination to tables (e.g. schedule log table) | 1.5h | 2010-02-11 17:00 A | 2010-02-11 18:30 A |  | 100% |  |  |
| 34 |  | Bug fixing and refactoring | 3h | 2010-02-15 14:00 A | 2010-02-17 15:00 A | 33 | 100% |  |  |
| 35 |  | Schedule duration validations | 4h | 2010-02-17 15:00 A | 2010-02-18 17:00 A | 34 | 100% |  |  |
| 36 |  | Search forms to schedule index and user index | 1.5h | 2010-02-18 17:00 A | 2010-02-18 18:30 A | 35 | 100% |  |  |
| 37 |  | Add calendars to the schedule index and form | 1.5h | 2010-02-22 14:00 A | 2010-02-22 15:30 A | 36 | 100% |  |  |
| 38 |  | Online help enhancements | 45min | 2010-02-22 15:30 A | 2010-02-22 16:15 A | 37 | 100% |  |  |
| 39 | 2.1.2 | **Telescope-controlling application** | 0.25d | 2010-02-04 14:30 A | 2010-02-04 15:30 A |  | 100% |  |  |
| 40 |  | Add celestial object inputs into the application | 1h | 2010-02-04 14:30 A | 2010-02-04 15:30 A |  | 100% |  |  |
| 41 | 2.2 | **Analysis and Design: (Total 32 units)** | 6.38d | 2010-02-04 14:30 A | 2010-02-24 16:30 A |  | 100% |  |  |
| 42 |  | Update documentation | 6h | 2010-02-04 14:30 A | 2010-02-08 16:00 A | 25 | 100% |  |  |
| 43 |  | Web application metrics gathering | 2h | 2010-02-24 14:30 A | 2010-02-24 16:30 A | 22 | 100% |  | start no earlier than 2010-02-24 08:00 |
| 44 | 2.3 | **Deployment: (Total 1 unit)** | 0.06d | 2010-02-25 08:00 A | 2010-02-25 14:45 A |  | 100% |  |  |
| 45 |  | Deploy in production environment | 15min | 2010-02-25 08:00 A | 2010-02-25 14:45 A |  | 100% |  |  |
| 46 |  | Release #6: Libraries and GUI Enhancements | 0d | 2010-02-25 08:00 A | 2010-02-25 08:00 A | 29, 39 | 100% |  | start no earlier than 2010-03-01 08:00 |
| 48 | 3 | **Iteration 7: Mobile Views: (Total: 88 units)** | 3.19d | 2010-03-04 08:00 A | 2010-03-15 14:15 | 27 | 95% | 5.06d |  |
| 49 | 3.1 | **Business Modelling (Total: 1 unit)** | 0.06d | 2010-03-13 08:00 A | 2010-03-15 14:15 A |  | 100% |  |  |
| 50 |  | Update vision to coincide with changes | 15min | 2010-03-13 08:00 A | 2010-03-15 14:15 A |  | 100% |  | start no earlier than 2010-03-12 08:00 |
| 51 | 3.2 | **Implementation: (Total: 42 units)** | 2.62d | 2010-03-04 08:00 A | 2010-03-11 16:30 A |  | 100% |  |  |
| 52 | 3.2.1 | **Web system** | 2.62d | 2010-03-04 08:00 A | 2010-03-11 16:30 A |  | 100% |  |  |
| 53 |  | Add validations for celestial object data types | 45min | 2010-03-04 08:00 A | 2010-03-04 15:15 A |  | 100% |  | start no earlier than 2010-03-03 08:00 |
| 54 |  | Add validations for coordinates (R.A. and Dec.) data types | 45min | 2010-03-04 08:00 A | 2010-03-04 15:15 A | 53 | 100% |  |  |
| 55 |  | Add Jruby script to toggle CSS element enabling/disabling | 1.5h | 2010-03-04 08:00 A | 2010-03-04 16:00 A | 54 | 100% |  |  |
| 56 |  | Add mobile device views and additional functionality | 4h | 2010-03-10 08:00 A | 2010-03-11 16:30 A |  | 100% |  | start no earlier than 2010-03-03 08:00 |
| 57 |  | Add administration section to online help | 1.5h | 2010-03-08 08:00 A | 2010-03-08 15:30 A |  | 100% |  |  |
| 58 |  | Refactor online help | 2h | 2010-03-08 08:00 A | 2010-03-08 16:00 A | 57 | 100% |  |  |
| 59 | 3.2.2 | **Telescope-Controlling Application** | 0.06d | 2010-03-11 14:30 A | 2010-03-11 14:45 A |  | 100% |  |  |
| 60 |  | Download and install Canon SDK | 15min | 2010-03-11 14:30 A | 2010-03-11 14:45 A |  | 100% |  | start no earlier than 2010-03-11 08:00 |
| 61 | 3.3 | **Testing (Total: 4 units)** | 1.12d | 2010-03-04 14:30 A | 2010-03-08 14:30 |  | 50% | 7.12d |  |
| 62 |  | Draft acceptance test | 30min | 2010-03-04 14:30 | 2010-03-04 15:00 |  |  | 8.12d | start no earlier than 2010-03-04 08:00 |
| 63 |  | Fix issue with testing environment | 30min | 2010-03-05 08:00 A | 2010-03-08 14:30 A |  | 100% |  |  |
| 64 | 3.4 | **Analysis and Design (Total: 40 units)** | 2.19d | 2010-03-08 14:00 A | 2010-03-15 14:15 |  | 95% | 5.06d |  |
| 65 |  | Add documentation to GitHub wiki | 4h | 2010-03-11 08:00 A | 2010-03-11 18:30 A |  | 100% |  | start no earlier than 2010-03-11 08:00 |
| 66 |  | Compile latest web application metrics | 30min | 2010-03-11 14:30 A | 2010-03-11 15:00 A |  | 100% |  |  |
| 67 |  | Create detailed plan for this iteration | 1h | 2010-03-11 14:30 A | 2010-03-11 15:30 A | 66 | 100% |  |  |
| 68 |  | Changes to developer's guide, configuration management | 30min | 2010-03-11 14:30 A | 2010-03-11 15:00 A | 67 | 100% |  |  |
| 69 |  | Create class diagram for telescope-controlling application | 1h | 2010-03-08 14:00 A | 2010-03-08 15:00 |  | 50% | 7d | start no earlier than 2010-03-08 08:00 |
| 70 |  | Create sequence diagrams for web application | 2h | 2010-03-08 14:00 A | 2010-03-08 16:00 A |  | 100% |  | start no earlier than 2010-03-08 08:00 |
| 71 |  | All documentation finished | 0d | 2010-03-13 08:00 A | 2010-03-13 08:00 A | 65, 66, 67, 68, 69, 70 | 100% |  | start no earlier than 2010-03-13 08:00 |
| 72 | 3.4.8 | **Deployment: (Total: 1 unit)** | 0.06d | 2010-03-13 08:00 A | 2010-03-15 14:15 A |  | 100% |  |  |

| ID | WBS | Task | Duration | Start | Finish | Predecessors | Complete | Total float | Constraint |
| --- | --- | --- | --- | --- | --- | --- | --- | --- | --- |
| 73 |  | Deploy latest versions of web application to production | 15min | 2010-03-13 08:00 A | 2010-03-15 14:15 A |  | 100% |  | start no earlier than 2010-03-12 08:00 |
| 74 |  | Release #7: Mobile Views | 0d | 2010-03-11 16:30 A | 2010-03-11 16:30 A | 52 | 100% |  | start no earlier than 2010-03-11 08:00 |
| 76 | 4 | **Iteration 8: Image Capturing: (Total: 125 units)** | 5.12d | 2010-03-13 08:00 A | 2010-03-31 15:30 A | 48 | 100% |  |  |
| 77 | 4.1 | **Implementation: (Total: 80 units)** | 5.06d | 2010-03-15 14:15 A | 2010-03-31 15:30 A |  | 100% |  |  |
| 78 | 4.1.1 | **Web system** | 5.06d | 2010-03-15 14:15 A | 2010-03-31 15:30 A |  | 100% |  |  |
| 79 |  | Create batch file to allow images to be POST'ed to the web server | 3h | 2010-03-15 14:15 A | 2010-03-17 15:15 A |  | 100% |  |  |
| 80 |  | Make changes to triggers and batch files to handle extra camera-related inputs to telescope-controlling application | 1h | 2010-03-17 15:15 A | 2010-03-17 16:15 A | 79 | 100% |  |  |
| 81 |  | Update mobile application CSS | 2h | 2010-03-29 14:00 A | 2010-03-29 16:00 A |  | 100% |  | start no earlier than 2010-03-29 08:00 |
| 82 |  | Update schedules controller index mobile view | 1h | 2010-03-29 16:00 A | 2010-03-31 15:00 A | 81 | 100% |  | start no earlier than 2010-03-29 08:00 |
| 83 |  | Update schedules controller show mobile view | 0.5h | 2010-03-31 15:00 A | 2010-03-31 15:30 A | 82 | 100% |  | start no earlier than 2010-03-29 08:00 |
| 84 |  | Update user sessions controller new mobile view | 0.5h | 2010-03-29 16:00 A | 2010-03-29 16:30 A | 81 | 100% |  | start no earlier than 2010-03-29 08:00 |
| 85 |  | Update images controller index mobile view | 0.5h | 2010-03-29 16:00 A | 2010-03-29 16:30 A | 81 | 100% |  | start no earlier than 2010-03-29 08:00 |
| 86 |  | Update info controller index mobile view | 0.25h | 2010-03-29 16:00 A | 2010-03-29 16:15 A | 81 | 100% |  | start no earlier than 2010-03-29 08:00 |
| 87 |  | Update telescope controller confirm park mobile view | 0.25h | 2010-03-29 16:00 A | 2010-03-29 16:15 A | 81 | 100% |  | start no earlier than 2010-03-29 08:00 |
| 88 |  | Create helper methods to handle mobile functionality for changing days, weeks, months | 1h | 2010-03-29 14:45 A | 2010-03-29 15:45 A | 89 | 100% |  | start no earlier than 2010-03-29 08:00 |
| 89 |  | Use session variables to add persistency for current date | 0.75h | 2010-03-29 14:00 A | 2010-03-29 14:45 A |  | 100% |  | start no earlier than 2010-03-29 08:00 |
| 90 | 4.1.2 | **Telescope-Controlling Application** | 2.38d | 2010-03-15 14:15 A | 2010-03-22 15:15 A |  | 100% |  |  |
| 91 |  | Create test program to communicate with the camera and take a picture | 4h | 2010-03-15 14:15 A | 2010-03-17 16:15 A |  | 100% |  |  |
| 92 |  | Test getting and setting parameters of the camera | 1h | 2010-03-17 16:15 A | 2010-03-18 15:15 A | 91 | 100% |  |  |
| 93 |  | Allow input for selected parameters | 1h | 2010-03-17 16:15 A | 2010-03-18 15:15 A | 91 | 100% |  |  |
| 94 |  | Set parameters based on inputs | 1.5h | 2010-03-18 15:15 A | 2010-03-18 16:45 A | 91, 93 | 100% |  |  |
| 95 |  | Add error checking | 1h | 2010-03-18 16:45 A | 2010-03-18 17:45 A | 91, 93, 94 | 100% |  |  |
| 96 |  | Migrate source code to telescope control app | 0.25h | 2010-03-22 14:00 A | 2010-03-22 14:15 A |  | 100% |  | start no earlier than 2010-03-19 08:00 |
| 97 |  | Clean up camera code and convert it to a method | 0.5h | 2010-03-22 14:15 A | 2010-03-22 14:45 A | 96 | 100% |  |  |
| 98 |  | Modify main method to pass camera settings to camera method | 0.5h | 2010-03-22 14:45 A | 2010-03-22 15:15 A | 97 | 100% |  |  |
| 99 | 4.2 | **Testing: (Total: 19 units)** | 0.75d | 2010-03-26 08:00 A | 2010-03-31 15:00 A |  | 100% |  |  |
| 100 | 4.2.1 | **Web system** | 0.75d | 2010-03-26 08:00 A | 2010-03-31 15:00 A |  | 100% |  |  |
| 101 |  | Fix issue with testing environment | 3h | 2010-03-26 08:00 A | 2010-03-31 15:00 A |  | 100% |  |  |
| 102 | 4.2.2 | **Telescope-Controlling Application** | 0.31d | 2010-03-29 14:00 A | 2010-03-29 15:15 A |  | 100% |  |  |
| 103 |  | Create camera test method | 0.25h | 2010-03-29 14:00 A | 2010-03-29 14:15 A |  | 100% |  | start no earlier than 2010-03-29 08:00 |
| 104 |  | Accept inputs from telescope control app | 0.25h | 2010-03-29 14:15 A | 2010-03-29 14:30 A | 103 | 100% |  |  |
| 105 |  | Output a test image | 0.25h | 2010-03-29 14:15 A | 2010-03-29 14:30 A | 103 | 100% |  |  |
| 106 |  | Simulate camera commands | 1h | 2010-03-29 14:15 A | 2010-03-29 15:15 A | 103 | 100% |  |  |
| 107 | 4.3 | **Analysis and Design: (Total: 25 units)** | 4.81d | 2010-03-15 14:15 A | 2010-03-31 08:00 A |  | 100% |  |  |
| 108 |  | Create detailed plan | 2h | 2010-03-15 14:15 A | 2010-03-15 16:15 A |  | 100% |  |  |
| 109 |  | Create PowerPoint for final presentation | 2h | 2010-03-25 14:30 A | 2010-03-25 16:30 A |  | 100% |  | start no earlier than 2010-03-25 08:00 |
| 110 |  | Read camera documentation | 0.75h | 2010-03-15 14:15 A | 2010-03-15 15:00 A |  | 100% |  |  |
| 111 |  | Update wiki | 1.5h | 2010-03-15 14:15 A | 2010-03-15 15:45 A |  | 100% |  |  |
| 112 |  | All documentation finished | 0d | 2010-03-31 08:00 A | 2010-03-31 08:00 A | 108, 109, 110, 111 | 100% |  | start no earlier than 2010-03-13 08:00 |
| 113 | 4.4 | **Deployment: (Total: 1 unit)** | 0.06d | 2010-03-13 08:00 A | 2010-03-15 14:15 A |  | 100% |  |  |
| 114 |  | Deploy latest versions of web application to production | 15min | 2010-03-13 08:00 A | 2010-03-15 14:15 A |  | 100% |  | start no earlier than 2010-03-12 08:00 |
| 115 |  | Release #8: Image Capturing | 0d | 2010-03-31 15:30 A | 2010-03-31 15:30 A | 77 | 100% |  |  |
| 117 | 5 | **Iteration 9: Refactored Final Release: (Total: 70 units)** | 11.62d | 2010-03-31 15:30 | 2010-04-26 08:00 | 76 |  | 0d |  |
| 118 | 5.1 | **Implementation: (Total: 12 units)** | 0.62d | 2010-03-31 15:30 | 2010-04-01 16:00 |  |  | 8.75d |  |
| 119 | 5.1.1 | **Web system** | 0.38d | 2010-04-01 14:30 | 2010-04-01 16:00 |  |  | 8.75d |  |
| 120 |  | Refactor online help controllers; nest them | 1.5h | 2010-04-01 14:30 | 2010-04-01 16:00 |  |  | 8.5d | start no earlier than 2010-04-01 08:00 |
| 121 | 5.1.2 | **Telescope-Controlling Application** | 0.38d | 2010-03-31 15:30 | 2010-04-01 15:00 |  |  | 9d |  |
| 122 |  | Final refactoring | 1.5h | 2010-03-31 15:30 | 2010-04-01 15:00 |  |  | 9d |  |
| 123 | 5.2 | **Testing: (Total: 36 units)** | 2.25d | 2010-04-01 16:00 | 2010-04-06 12:00 | 118 |  | 8.75d |  |
| 124 |  | Fix functional tests | 3h | 2010-04-01 16:00 | 2010-04-05 14:30 | 115 |  | 8.75d | start no earlier than 2010-01-07 08:00 |
| 125 |  | System testing | 2h | 2010-04-05 14:30 | 2010-04-05 16:30 | 124 |  | 8.75d |  |
| 126 |  | Integration testing | 3h | 2010-04-06 08:00 | 2010-04-06 11:00 | 125 |  | 8.75d |  |
| 127 |  | Final user acceptance test | 1h | 2010-04-06 11:00 | 2010-04-06 12:00 | 126 |  | 8.75d |  |
| 128 | 5.3 | **Analysis and Design: (Total: 12 units)** | 0.75d | 2010-03-31 15:30 | 2010-04-01 16:30 |  |  | 10.88d |  |
| 129 | 5.3.1 | **Finalize documentation** | 0.5d | 2010-03-31 15:30 | 2010-04-01 15:30 | 115 |  | 10.88d |  |
| 130 |  | Synchronize Word documents with Wiki | 2h | 2010-03-31 15:30 | 2010-04-01 15:30 |  |  | 10.88d |  |
| 131 |  | Compile final metrics and project statistics | 1h | 2010-04-01 15:30 | 2010-04-01 16:30 | 130 |  | 10.88d |  |
| 132 | 5.4 | **Deployment: (Total: 10 units)** | 0.62d | 2010-04-07 14:30 | 2010-04-08 15:00 |  |  | 7.12d |  |
| 133 |  | Create deployment diagram | 2h | 2010-04-07 14:30 | 2010-04-07 16:30 |  |  | 7.12d | start no earlier than 2010-04-07 08:00 |
| 134 |  | Deploy final versions of system to production environment | 30min | 2010-04-08 14:30 | 2010-04-08 15:00 | 133 |  | 7.12d |  |
| 135 | 5.5 | **Final Presentation** | 7.25d | 2010-04-08 08:00 | 2010-04-26 08:00 |  |  | 0d |  |
| 136 |  | Internal presentation | 0d | 2010-04-08 08:00 | 2010-04-08 08:00 |  |  | 7.25d | start no earlier than 2010-04-08 08:00 |
| 137 |  | Present project to OC faculty and audience | 0d | 2010-04-26 08:00 | 2010-04-26 08:00 | 136 |  | 0d | start no earlier than 2010-04-26 08:00 |
| 138 |  | Original coding ceases | 0d | 2010-04-08 08:00 | 2010-04-08 08:00 |  |  | 7.25d | start no earlier than 2010-04-08 08:00 |
| 139 |  | Corrective coding ceases | 0d | 2010-04-20 08:00 | 2010-04-20 08:00 | 138 |  | 3.5d | start no earlier than 2010-04-20 08:00 |
| 140 |  | Final release | 0d | 2010-04-26 08:00 | 2010-04-26 08:00 | 137 |  | 0d | start no earlier than 2010-04-26 08:00 |

## Version 2 (saved 2010-04-06)

Note of the change: meeting 5 docs

Last finish stays 2010-04-26.

Changed:

| ID | Task | Start | Finish | Duration | Total float | Other |
| --- | --- | --- | --- | --- | --- | --- |
| 135 | **Final Presentation** | 2010-04-08 08:00 → 2010-04-07 08:00 (-1d) |  | 7.25d → 7.75d |  |  |
| 136 | Internal presentation | 2010-04-08 08:00 → 2010-04-07 08:00 (-1d) | 2010-04-08 08:00 → 2010-04-07 08:00 (-1d) |  | 7.25d → 7.75d | constraint start no earlier than 2010-04-08 08:00 → start no earlier than 2010-04-07 08:00 |
