# SpikeProject

How a schedule from MS Project changed from version to version. A marks actual dates.

## Version 1 (saved 2009-11-08, file Stargazer_ProjectPlan.mpp)

Note of the change: Meeting 3 documents

| ID | WBS | Task | Duration | Start | Finish | Predecessors | Complete | Total float | Constraint |
| --- | --- | --- | --- | --- | --- | --- | --- | --- | --- |
| 1 | 1 | **Inception Phase** | 4.4d | 2009-10-14 08:00 A | 2009-10-21 16:00 |  | 71% | 22.3d |  |
| 2 | 1.1 | **Documentation** | 0.2d | 2009-10-14 08:00 A | 2009-10-14 09:00 A |  | 100% |  |  |
| 3 |  | Create vision | 0.5h | 2009-10-14 08:00 A | 2009-10-14 08:30 A |  | 100% |  |  |
| 4 |  | Create project plan document | 0.5h | 2009-10-14 08:00 A | 2009-10-14 08:30 A |  | 100% |  | finish no earlier than 2009-09-09 17:00 |
| 5 |  | Add business case and product info to vision | 1h | 2009-10-14 08:00 A | 2009-10-14 09:00 A | 3 | 100% |  |  |
| 6 |  | Add initial architecture to developer's guide | 0.25h | 2009-10-14 08:00 A | 2009-10-14 08:15 A | 3 | 100% |  |  |
| 7 |  | Add risks to project plan | 0.5h | 2009-10-14 08:00 A | 2009-10-14 08:30 A | 4 | 100% |  |  |
| 8 |  | Research image recognition technologies | 6h | 2009-10-16 14:30 | 2009-10-21 16:00 |  |  | 22.3d | start no earlier than 2009-10-16 08:00 |
| 9 |  | Research hardware I/O specifications | 6h | 2009-10-16 14:30 A | 2009-10-21 16:00 A |  | 100% |  | start no earlier than 2009-10-16 08:00 |
| 10 |  | Research development environment components | 6h | 2009-10-16 14:30 A | 2009-10-21 16:00 A |  | 100% |  | start no earlier than 2009-10-16 08:00 |
| 11 |  | Team meeting #1 | 0h | 2009-10-14 08:00 A | 2009-10-14 08:00 A |  | 100% |  | start no earlier than 2009-09-09 08:00 |
| 13 | 2 | **Elaboration Phase** | 7.8d | 2009-10-16 08:00 A | 2009-11-09 08:30 |  | 97% | 15.7d |  |
| 14 | 2.1 | **Documentation** | 0.8d | 2009-10-21 08:00 A | 2009-10-23 15:00 A |  | 100% |  |  |
| 15 |  | Create tutorial plan | 0.5h | 2009-10-23 08:00 A | 2009-10-23 15:00 A |  | 100% |  | start no earlier than 2009-10-21 08:00 |
| 16 |  | Create initial developer's guide | 2h | 2009-10-21 13:00 A | 2009-10-21 15:00 A |  | 100% |  | start no earlier than 2009-10-21 08:00 |
| 17 |  | Create use case diagram | 0.5h | 2009-10-21 08:00 A | 2009-10-21 13:30 A |  | 100% |  |  |
| 18 |  | Write fully dressed use cases | 1.5h | 2009-10-21 13:00 A | 2009-10-21 14:30 A | 16 | 100% |  | start no earlier than 2009-10-21 08:00 |
| 19 |  | Research framework and language | 16h | 2009-10-16 08:00 A | 2009-10-30 17:30 A | 10 | 100% |  | start no earlier than 2009-10-28 08:00 |
| 20 |  | Team meeting #2 | 0h | 2009-10-21 08:00 A | 2009-10-21 08:00 A |  | 100% |  | start no earlier than 2009-10-21 08:00 |
| 21 | 2.4 | **Documentation** | 2.15d | 2009-10-23 08:00 A | 2009-10-31 09:15 |  | 79% | 20.05d |  |
| 22 |  | Update vision | 0.5h | 2009-10-23 08:00 A | 2009-10-23 15:00 A | 3 | 100% |  |  |
| 23 |  | Update project plan document | 0.5h | 2009-10-23 08:00 A | 2009-10-23 15:00 A | 4 | 100% |  | finish no earlier than 2009-09-09 17:00 |
| 24 |  | Update developer's guide | 0.5h | 2009-10-23 08:00 A | 2009-10-23 15:00 A | 16 | 100% |  |  |
| 25 |  | Draft acceptance test | 1h | 2009-10-28 13:00 | 2009-10-28 14:00 |  |  | 21.4d | start no earlier than 2009-10-28 08:00 |
| 26 |  | Update installation guide information | 1h | 2009-10-28 13:00 A | 2009-10-28 14:00 A | 16 | 100% |  | start no earlier than 2009-10-28 08:00 |
| 27 |  | Get extra user stories from customer | 1h | 2009-10-31 08:00 A | 2009-10-31 09:00 A |  | 100% |  | start no earlier than 2009-10-31 08:00 |
| 28 |  | Prioritize the user stories | 0.25h | 2009-10-31 09:00 A | 2009-10-31 09:15 A | 27 | 100% |  | start no earlier than 2009-10-31 08:00 |
| 29 |  | Setting up development environment | 2h | 2009-10-28 13:00 A | 2009-10-28 15:00 A | 10 | 100% |  | start no earlier than 2009-10-28 08:00 |
| 30 |  | Create domain model | 1h | 2009-10-28 08:00 A | 2009-10-28 14:00 A |  | 100% |  |  |
| 31 |  | Team meeting #3 | 0h | 2009-10-28 08:00 A | 2009-10-28 08:00 A |  | 100% |  | start no earlier than 2009-10-28 08:00 |
| 32 | 2.8 | **Research/initial creation of telescope controller program** | 2.8d | 2009-10-30 14:30 A | 2009-11-04 16:00 A |  | 100% |  |  |
| 33 |  | Test telescope interface/drivers | 3h | 2009-11-04 13:00 A | 2009-11-04 16:00 A |  | 100% |  | start no earlier than 2009-11-04 08:00 |
| 34 |  | Test telescope programs (Autostar, ASCOM) | 2h | 2009-10-30 14:30 A | 2009-10-30 16:30 A |  | 100% |  | start no earlier than 2009-10-30 08:00 |
| 35 |  | Team meeting #4 | 0h | 2009-11-04 08:00 A | 2009-11-04 08:00 A |  | 100% |  | start no earlier than 2009-11-04 08:00 |
| 36 | 2.10 | **Ruby on Rails SPIKE Project** | 3d | 2009-11-04 08:00 A | 2009-11-09 08:30 |  | 99% | 0d |  |
| 37 |  | Unit testing tutorials | 1h | 2009-11-06 14:30 A | 2009-11-06 15:30 A |  | 100% |  | start no earlier than 2009-11-06 08:00 |
| 38 |  | Commit project to GitHub | 0.5h | 2009-11-06 08:00 A | 2009-11-06 15:00 A | 39, 40 | 100% |  |  |
| 39 |  | Post scaffolding tutorial | 1.5h | 2009-11-04 08:00 A | 2009-11-04 14:30 A |  | 100% |  |  |
| 40 |  | Comment and tag functionality tutorial | 1.5h | 2009-11-04 08:00 A | 2009-11-04 14:30 A | 39 | 100% |  |  |
| 41 |  | Collect SPIKE code for submission | 0.5h | 2009-11-09 08:00 A | 2009-11-09 08:30 A |  | 100% |  | start no earlier than 2009-11-09 08:00 |
| 42 |  | SPIKE Project complete | 0d | 2009-11-06 08:00 A | 2009-11-06 08:00 A |  | 100% |  | start no earlier than 2009-11-06 08:00 |
| 44 | 3 | **Construction Phase** | 18.2d | 2009-10-14 08:00 | 2009-11-20 17:00 |  |  | 8.5d |  |
| 45 | 3.1 | **Documentation: Iteration 2: SPIKE** | 0.6d | 2009-11-08 08:00 | 2009-11-08 11:00 |  |  | 16.8d |  |
| 46 |  | Add using Git information to developer's guide | 1h | 2009-11-08 08:00 | 2009-11-08 09:00 |  |  | 17.2d | start no earlier than 2009-11-08 08:00 |
| 47 |  | Update project plan for release #1 and #2 | 1.5h | 2009-11-08 08:00 | 2009-11-08 09:30 |  |  | 17.1d | start no earlier than 2009-11-08 08:00 |
| 48 |  | Add architecture diagram and legend to developer's guide | 1h | 2009-11-08 08:00 | 2009-11-08 09:00 |  |  | 17.2d | start no earlier than 2009-11-08 08:00 |
| 49 |  | Update testing plan | 3h | 2009-11-08 08:00 | 2009-11-08 11:00 |  |  | 16.8d | start no earlier than 2009-11-08 08:00 |
| 50 | 3.2 | **Create web system** | 2.1d | 2009-11-13 14:30 | 2009-11-14 16:30 |  |  | 11.4d |  |
| 51 |  | Create main page | 0.5h | 2009-11-13 14:30 | 2009-11-13 15:00 |  |  | 11.4d | start no earlier than 2009-11-13 08:00 |
| 52 |  | Create scheduling form | 3h | 2009-11-13 15:00 | 2009-11-14 08:30 | 51 |  | 11.4d | start no earlier than 2009-11-13 08:00 |
| 53 |  | Create scheduling review logs | 4h | 2009-11-14 08:30 | 2009-11-14 13:30 | 52 |  | 11.4d | start no earlier than 2009-11-13 08:00 |
| 54 |  | Create online help documentation | 3h | 2009-11-14 13:30 | 2009-11-14 16:30 | 51, 52, 53 |  | 11.4d | start no earlier than 2009-11-14 08:00 |
| 55 | 3.3 | **Documentation: Iteration 3: Release #1** | 13.8d | 2009-10-14 08:00 | 2009-11-13 17:30 |  |  | 12.9d |  |
| 56 |  | Update user's guide | 3h | 2009-11-13 14:30 | 2009-11-13 17:30 |  |  | 12.9d | start no earlier than 2009-11-13 08:00 |
| 57 |  | Create Release Notes | 1h | 2009-10-14 08:00 | 2009-10-14 09:00 |  |  | 26.5d |  |
| 58 |  | Team meeting #5 | 0h | 2009-11-11 08:00 | 2009-11-11 08:00 |  |  | 14.2d | start no earlier than 2009-11-11 08:00 |
| 59 |  | Release #1 | 0h | 2009-11-18 08:00 | 2009-11-18 08:00 | 42 |  | 8.5d | start no earlier than 2009-11-18 08:00 |
| 60 | 3.6 | **Add components to web system** | 1.2d | 2009-11-18 13:00 | 2009-11-20 17:00 |  |  | 8.5d |  |
| 61 |  | Add separate stylesheets for PC users and mobile device users | 2h | 2009-11-20 14:30 | 2009-11-20 16:30 |  |  | 8.6d | start no earlier than 2009-11-20 08:00 |
| 62 |  | Add gallery section - display latest images from telescope | 6h | 2009-11-18 13:00 | 2009-11-20 17:00 |  |  | 8.5d | start no earlier than 2009-11-18 08:00 |
| 63 |  | Team meeting #6 | 0h | 2009-11-18 08:00 | 2009-11-18 08:00 |  |  | 9.7d | start no earlier than 2009-11-18 08:00 |
| 65 | 4 | **Transition Phase** | 5.2d | 2009-11-25 08:00 | 2009-12-04 08:00 |  |  | 0d |  |
| 66 |  | Add emailing server to web server | 5h | 2009-11-25 14:00 | 2009-11-27 17:00 |  |  | 4d | finish no earlier than 2009-11-27 17:00 |
| 67 |  | Team meeting #7 | 0h | 2009-11-25 08:00 | 2009-11-25 08:00 |  |  | 5.2d | start no earlier than 2009-11-25 08:00 |
| 68 |  | Release #2 | 0h | 2009-11-25 08:00 | 2009-11-25 08:00 | 59 |  | 4d | start no earlier than 2009-11-25 08:00 |
| 69 |  | End refactoring | 6h | 2009-11-25 13:00 | 2009-11-27 17:00 | 68 |  | 4d | start no earlier than 2009-11-25 08:00 |
| 70 |  | Extensive End User Testing | 2h | 2009-11-27 14:30 | 2009-11-27 16:30 |  |  | 4.1d | start no earlier than 2009-11-27 08:00 |
| 71 |  | Final Acceptance Test | 0.5h | 2009-12-02 13:00 | 2009-12-02 13:30 |  |  | 0.6d | start no earlier than 2009-12-02 08:00 |
| 72 |  | Final Prototype Release (the refactored 2nd release) | 0d | 2009-12-04 08:00 | 2009-12-04 08:00 | 69, 68 |  | 0d | start no earlier than 2009-12-04 08:00 |

## Version 2 (saved 2009-11-13, file Stargazer_ProjectPlan.mpp)

Note of the change: Added domain model image

Last finish stays 2009-12-04.

Added:

| ID | Task | Duration | Start | Finish | Resources |
| --- | --- | --- | --- | --- | --- |
| 54 | Create class diagram | 1d? | 2009-10-14 08:00 | 2009-10-14 13:00 | Rob |
| 60 | Add administrative/regular user sections | 1d? | 2009-10-14 08:00 | 2009-10-14 13:00 | Rob |

Changed:

| ID | Task | Start | Finish | Duration | Total float | Other |
| --- | --- | --- | --- | --- | --- | --- |
| 42 | **Construction Phase** |  |  | 18.2d → 18.2d? |  |  |
| 48 | **Create web system** |  | 2009-11-14 16:30 → 2009-11-14 11:18 | 2.1d → 1.26d | 11.4d → 12.24d |  |
| 49 | Create authentication/login subsystem |  | 2009-11-13 15:00 → 2009-11-13 17:30 | 0.5h → 3h | 11.4d → 12.24d | was named Create main page |
| 50 | Create scheduling form | 2009-11-13 15:00 → 2009-11-14 08:00 (+1d) | 2009-11-14 08:30 → 2009-11-14 08:09 | 3h → 0.15h | 11.4d → 12.24d |  |
| 51 | Create scheduling review logs | 2009-11-14 08:30 → 2009-11-14 08:09 | 2009-11-14 13:30 → 2009-11-14 08:18 | 4h → 0.15h | 11.4d → 12.24d |  |
| 52 | Create online help documentation | 2009-11-14 13:30 → 2009-11-14 08:18 | 2009-11-14 16:30 → 2009-11-14 11:18 |  | 11.4d → 12.24d |  |
| 53 | **Documentation: Iteration 3: Release #1** |  |  | 13.8d → 13.8d? |  |  |
| 59 | **Add components to web system** | 2009-11-18 13:00 → 2009-10-14 08:00 (-35d) |  | 1.2d → 18.2d? |  |  |

## Version 3 (saved 2009-11-17, file Stargazer_ProjectPlan.mpp)

Note of the change: Updates in anticaption for Meeting 4 assignment hand-in

Last finish stays 2009-12-04. Complete tasks 32 → 42.

Added:

| ID | Task | Duration | Start | Finish | Predecessors | Resources |
| --- | --- | --- | --- | --- | --- | --- |
| 53 | Create authorization scheme (admin/user) | 4h | 2009-10-14 08:00 A | 2009-10-14 12:00 A | 49 | Rob |
| 60 | Update documentation | 4.75h | 2009-10-14 08:00 | 2009-10-14 12:45 |  | Jason |
| 62 | Set up production server | 2h | 2009-10-14 08:00 | 2009-10-14 10:00 |  | Rob |

Changed:

| ID | Task | Start | Finish | Duration | Complete | Total float | Predecessors | Other |
| --- | --- | --- | --- | --- | --- | --- | --- | --- |
| 42 | **Construction Phase** | 2009-10-14 08:00 A |  | 18.2d? → 18.2d | 0% → 49% |  |  |  |
| 43 | **Documentation: Iteration 2: SPIKE** | 2009-11-08 08:00 A |  |  | 0% → 54% |  |  |  |
| 44 | Add using Git information to developer's guide | 2009-11-08 08:00 A | 2009-11-08 09:00 A |  | 0% → 100% | 17.2d → none |  |  |
| 45 | Update project plan for release #1 and #2 | 2009-11-08 08:00 A | 2009-11-08 09:30 A |  | 0% → 100% | 17.1d → none |  |  |
| 46 | Add architecture diagram and legend to developer's guide | 2009-11-08 08:00 A | 2009-11-08 09:00 A |  | 0% → 100% | 17.2d → none |  |  |
| 47 | Update testing plan |  |  |  |  |  |  | resources Rob → Jason |
| 48 | **Create web system** | 2009-11-13 14:30 → 2009-10-14 08:00 A (-30d) | 2009-11-14 11:18 → 2009-11-14 14:15 A | 1.26d → 14.85d | 0% → 100% | 12.24d → none |  |  |
| 49 | Create authentication/login subsystem | 2009-11-13 14:30 A | 2009-11-13 17:30 A |  | 0% → 100% | 12.24d → none |  |  |
| 50 | Add validation to forms, unit tests, etc | 2009-11-14 08:00 A | 2009-11-14 08:09 → 2009-11-14 12:00 A | 0.15h → 4h | 0% → 100% | 12.24d → none |  | was named Create scheduling form |
| 51 | Create scheduling review logs | 2009-11-14 08:09 → 2009-11-14 13:00 A | 2009-11-14 08:18 → 2009-11-14 13:15 A | 0.15h → 0.25h | 0% → 100% | 12.24d → none |  |  |
| 52 | Create online help documentation | 2009-11-14 08:18 → 2009-11-14 13:15 A | 2009-11-14 11:18 → 2009-11-14 14:15 A | 3h → 1h | 0% → 100% | 12.24d → none |  |  |
| 54 | **Documentation: Iteration 3: Release #1** | 2009-10-14 08:00 A |  | 13.8d? → 13.8d | 0% → 80% |  |  |  |
| 55 | Create class diagram | 2009-10-14 08:00 A | 2009-10-14 13:00 → 2009-10-14 09:00 A | 1d? → 1h | 0% → 100% | 25.7d → none |  |  |
| 56 | Update user's guide | 2009-11-13 14:30 A | 2009-11-13 17:30 A |  | 0% → 100% | 12.9d → none |  |  |
| 61 | **Add components to web system** |  |  | 18.2d? → 18.2d |  |  |  |  |
| 63 | Add HTTPS/HTTP for admin/user | 2009-10-14 08:00 → 2009-10-14 10:00 | 2009-10-14 13:00 → 2009-10-14 12:00 | 1d? → 2h |  | 25.7d → 25.9d | none → 62 | was named Add administrative/regular user sections |

## Version 4 (saved 2009-11-25, file Stargazer_ProjectPlan.mpp)

Note of the change: Meeting 5 docs update

Last finish stays 2009-12-04. Complete tasks 42 → 52.

Added:

| ID | Task | Duration | Start | Finish | Resources |
| --- | --- | --- | --- | --- | --- |
| 67 | Change schedule input forms | 4h | 2009-10-14 08:00 A | 2009-10-14 12:00 | Rob |
| 68 | Fix unit tests | 2h | 2009-10-14 08:00 A | 2009-10-14 10:00 A | Rob |

Changed:

| ID | Task | Start | Finish | Duration | Complete | Total float | Other |
| --- | --- | --- | --- | --- | --- | --- | --- |
| 44 | **Construction Phase** |  |  |  | 49% → 80% |  |  |
| 45 | **Documentation: Iteration 2: SPIKE** |  | 2009-11-08 11:00 A |  | 54% → 100% | 16.8d → none |  |
| 49 | Update testing plan | 2009-11-08 08:00 A | 2009-11-08 11:00 A |  | 0% → 100% | 16.8d → none |  |
| 56 | **Documentation: Iteration 3: Release #1** |  | 2009-11-13 17:30 A |  | 80% → 100% | 12.9d → none |  |
| 59 | Create Release Notes | 2009-10-14 08:00 A | 2009-10-14 09:00 A |  | 0% → 100% | 26.5d → none |  |
| 60 | Team meeting #5 | 2009-11-11 08:00 A | 2009-11-11 08:00 A |  | 0% → 100% | 14.2d → none |  |
| 61 | Release #1 | 2009-11-18 08:00 A | 2009-11-18 08:00 A |  | 0% → 100% | 8.5d → none |  |
| 62 | Update documentation | 2009-10-14 08:00 A |  |  | 0% → 10% |  |  |
| 63 | **Add components to web system** | 2009-10-14 08:00 A |  |  | 0% → 72% |  |  |
| 64 | Set up production server | 2009-10-14 08:00 A | 2009-10-14 10:00 → 2009-10-14 10:30 A | 2h → 2.5h | 0% → 100% | 26.3d → none |  |
| 65 | Add HTTPS/HTTP for admin/user | 2009-10-14 10:00 → 2009-10-14 10:30 | 2009-10-14 12:00 → 2009-10-14 12:30 |  |  | 25.9d → 25.8d | resources Rob → Robert |
| 69 | Add gallery section - display latest images from telescope | 2009-11-18 13:00 A | 2009-11-20 17:00 A |  | 0% → 100% | 8.5d → none | resources Robert → Rob |
| 70 | Team meeting #6 | 2009-11-18 08:00 A | 2009-11-18 08:00 A |  | 0% → 100% | 9.7d → none |  |
| 72 | **Transition Phase** | 2009-11-25 08:00 A |  |  |  |  |  |
| 73 | Create PowerPoint Presentation | 2009-11-25 14:00 → 2009-11-27 16:00 (+2d) |  | 5h → 1h |  |  | was named Add emailing server to web server; resources Rob → Robert |
| 74 | Team meeting #7 | 2009-11-25 08:00 A | 2009-11-25 08:00 A |  | 0% → 100% | 5.2d → none |  |
| 75 | Release #2 | 2009-11-25 08:00 A | 2009-11-25 08:00 A |  | 0% → 100% | 4d → none |  |

## Version 5 (saved 2009-11-30, file Stargazer_ProjectPlan.mpp)

Note of the change: updated docs in prep for dec 2nd meeting

Last finish stays 2009-12-04. Complete tasks 52 → 54.

Added:

| ID | Task | Duration | Start | Finish | Constraint | Resources |
| --- | --- | --- | --- | --- | --- | --- |
| 62 | Test connection with telescope drivers using C# tutorial | 2h | 2009-11-25 13:00 | 2009-11-25 15:00 | start no earlier than 2009-11-25 08:00 | Robert |

Changed:

| ID | Task | Start | Finish | Duration | Complete | Total float | Other |
| --- | --- | --- | --- | --- | --- | --- | --- |
| 44 | **Construction Phase** |  | 2009-11-20 17:00 → 2009-11-28 16:00 (+8d) | 18.2d → 24.2d | 80% → 75% | 8.5d → 2.5d |  |
| 63 | Update documentation | 2009-10-14 08:00 A → 2009-11-27 08:00 A (+44d) | 2009-10-14 12:45 → 2009-11-28 16:00 (+45d) | 4.75h → 10h | 10% → 3% | 25.75d → 2.5d | resources Jason → Jason; Robert; Rob |
| 64 | **Add components to web system** | 2009-10-14 08:00 A → 2009-11-18 13:00 A (+35d) | 2009-11-20 17:00 → 2009-11-28 10:00 (+8d) | 18.2d → 6.2d | 72% → 89% | 8.5d → 3.5d |  |
| 65 | Set up production server | 2009-10-14 08:00 A → 2009-11-20 08:00 A (+37d) | 2009-10-14 10:30 A → 2009-11-20 17:00 A (+37d) |  |  |  |  |
| 66 | Add HTTPS/HTTP for admin/user | 2009-10-14 10:30 → 2009-11-25 13:00 A (+42d) | 2009-10-14 12:30 → 2009-11-25 15:00 A (+42d) |  | 0% → 100% | 25.8d → none | constraint none → start no earlier than 2009-11-25 08:00; resources Robert → Rob |
| 67 | Add separate stylesheets for PC users and mobile device users | 2009-11-20 14:30 → 2009-11-28 08:00 (+8d) | 2009-11-20 16:30 → 2009-11-28 10:00 (+8d) |  |  | 8.6d → 3.5d | constraint start no earlier than 2009-11-20 08:00 → start no earlier than 2009-11-28 08:00; resources Jason → Rob |
| 68 | Change schedule input forms | 2009-10-14 08:00 A → 2009-11-27 08:00 A (+44d) | 2009-10-14 12:00 → 2009-11-28 09:00 A (+45d) |  | 70% → 100% | 25.9d → none |  |
| 69 | Fix unit tests | 2009-10-14 08:00 A → 2009-11-25 08:00 A (+42d) | 2009-10-14 10:00 A → 2009-11-25 15:00 A (+42d) |  |  |  |  |
| 74 | Create PowerPoint Presentation | 2009-11-27 16:00 → 2009-11-27 14:30 | 2009-11-27 17:00 → 2009-11-27 16:30 | 1h → 2h |  | 4d → 4.1d | constraint finish no earlier than 2009-11-27 17:00 → start no earlier than 2009-11-27 08:00; resources Robert → Rob |

## Version 6 (saved 2009-12-02, file Stargazer_ProjectPlan.mpp)

Note of the change: meeting 6 docs

Last finish stays 2009-12-04. Complete tasks 54 → 56.

Changed:

| ID | Task | Start | Finish | Complete | Total float | Other |
| --- | --- | --- | --- | --- | --- | --- |
| 44 | **Construction Phase** |  |  | 75% → 78% |  |  |
| 62 | Test connection with telescope drivers using C# tutorial | 2009-11-25 13:00 A | 2009-11-25 15:00 A | 0% → 100% | 4.8d → none |  |
| 73 | **Transition Phase** |  |  | 0% → 19% |  |  |
| 74 | Create Initial PowerPoint Presentation | 2009-11-27 14:30 A | 2009-11-27 16:30 A | 0% → 100% | 4.1d → none | was named Create PowerPoint Presentation |

## Version 7 (saved 2009-12-02, file Stargazer_ProjectPlan_Semester1.mpp)

Note of the change: Added draft for plan for second semester

Last finish stays 2009-12-04.

Changed:

| ID | Task | Finish | Duration | Complete | Total float |
| --- | --- | --- | --- | --- | --- |
| 44 | **Construction Phase** |  |  | 78% → 76% |  |
| 64 | **Add components to web system** | 2009-11-28 10:00 → 2009-11-28 12:00 | 6.2d → 6.6d | 89% → 80% | 3.5d → 3.1d |
| 67 | Add separate stylesheets for PC users and mobile device users | 2009-11-28 10:00 → 2009-11-28 12:00 | 2h → 4h |  | 3.5d → 3.1d |
