# Stargazer - Semester 2

How a schedule from MS Project changed from version to version. A marks actual dates.

## Version 1 (saved 2010-01-06)

Note of the change: Added draft for plan for second semester

| ID | WBS | Task | Duration | Start | Finish | Predecessors | Total float | Constraint |
| --- | --- | --- | --- | --- | --- | --- | --- | --- |
| 1 | 1 | **Construction phase** | 2.56d? | 2010-01-06 14:30 | 2010-01-13 16:15 |  | 29.31d |  |
| 2 | 1.1 | **Website** | 2.56d? | 2010-01-06 14:30 | 2010-01-13 16:15 |  | 29.31d |  |
| 3 |  | Add new online help documentation to website | 1d? | 2010-01-06 14:30 | 2010-01-07 16:30 |  | 29.31d |  |
| 4 |  | Fix CSS with mobile devices | 15min | 2010-01-07 16:30 | 2010-01-07 16:45 | 3 | 29.31d | start no earlier than 2010-01-07 08:00 |
| 5 |  | Implement mail server/mailing system | 3h | 2010-01-07 16:45 | 2010-01-11 15:15 | 4 | 29.31d |  |
| 6 |  | Add pagination to website tables | 3h | 2010-01-11 15:15 | 2010-01-13 16:15 | 5 | 29.31d |  |
| 7 |  | Integrate libraries (which have celestial objects of interest) with web site | 4h | 2010-01-06 14:30 | 2010-01-07 16:30 |  | 30.88d |  |
| 8 |  | Minor refactoring | 1.5h | 2010-01-06 14:30 | 2010-01-06 16:00 |  | 31.5d |  |
| 9 |  | LOW PRIORITY: Remove dropdown select boxes in mobile views | 1h | 2010-01-06 14:30 | 2010-01-06 15:30 |  | 31.62d |  |
| 10 |  | LOW PRIORITY: Fix functional tests | 3h | 2010-01-07 14:30 | 2010-01-07 17:30 |  | 30.62d | start no earlier than 2010-01-07 08:00 |
| 11 |  | LOW PRIORITY: migrate database to PostgreSQL | 30min | 2010-01-06 14:30 | 2010-01-06 15:00 |  | 31.75d |  |
| 12 | 1.2 | **Job scheduling** | 0.5d | 2010-01-06 14:30 | 2010-01-06 16:30 |  | 31.38d |  |
| 13 |  | Research Whenever plugin to handle scheduling | 2h | 2010-01-06 14:30 | 2010-01-06 16:30 |  | 31.38d |  |
| 14 |  | Create script which includes connection to telescope server | 1h | 2010-01-06 14:30 | 2010-01-06 15:30 |  | 31.62d |  |
| 15 | 1.3 | **Documentation** | 1d | 2010-01-06 14:30 | 2010-01-07 16:30 |  | 30.88d |  |
| 16 |  | Documentation updates | 4h | 2010-01-06 14:30 | 2010-01-07 16:30 |  | 30.88d |  |
| 17 |  | Draft acceptance test | 1h | 2010-01-06 14:30 | 2010-01-06 15:30 |  | 31.62d |  |
| 18 | 1.4 | **Telescope movement** | 1d? | 2010-01-06 14:30 | 2010-01-07 16:30 |  | 30.88d |  |
| 19 |  | Allow for parking the telescope | 15min | 2010-01-06 14:30 | 2010-01-06 14:45 |  | 31.81d |  |
| 20 |  | Research telescope movement/positioning with coordinates | 2h | 2010-01-06 14:30 | 2010-01-06 16:30 |  | 31.38d |  |
| 21 |  | LOW PRIORITY: Implement manual telescope positioning | 1d? | 2010-01-06 14:30 | 2010-01-07 16:30 |  | 30.88d |  |
| 22 | 1.5 | **Image recognition** | 0.75d | 2010-01-06 14:30 | 2010-01-07 15:30 |  | 31.12d |  |
| 23 |  | Research image recognition options | 3h | 2010-01-06 14:30 | 2010-01-07 15:30 |  | 31.12d |  |
| 24 |  | Integrate telescope positioning and image recognition into an application | 1d? | 2010-01-06 14:30 | 2010-01-07 16:30 |  | 30.88d |  |
| 25 |  | Integrate camera to system | 1d? | 2010-01-06 14:30 | 2010-01-07 16:30 |  | 30.88d |  |
| 26 | 2 | **Transition phase** | 31.88d? | 2010-01-06 08:00 | 2010-04-20 08:00 |  | 0d |  |
| 27 |  | End refactoring | 4h | 2010-01-06 14:30 | 2010-01-07 16:30 |  | 30.88d |  |
| 28 |  | Final acceptance test | 1d? | 2010-01-06 14:30 | 2010-01-07 16:30 |  | 30.88d |  |
| 29 |  | Final presentation | 0d | 2010-04-20 08:00 | 2010-04-20 08:00 |  | 0d | start no earlier than 2010-04-20 08:00 |
| 30 |  | Final release | 0d | 2010-01-06 08:00 | 2010-01-06 08:00 |  | 31.88d |  |

## Version 2 (saved 2010-01-08)

Note of the change: updated plan for semester 2

Last finish 2010-04-20 → 2010-04-07 (-13d).

Added:

| ID | Task | Duration | Start | Finish | Predecessors | Constraint | Resources |
| --- | --- | --- | --- | --- | --- | --- | --- |
| 1 | **Iteration 5: Release #3** | 4.25d | 2010-01-06 14:30 | 2010-01-20 08:00 |  |  |  |
| 2 | **Web system** | 2.25d | 2010-01-07 14:30 | 2010-01-14 15:00 |  |  |  |
| 6 | Integrate libraries (which have celestial objects of interest) to web site | 5h | 2010-01-11 14:00 | 2010-01-14 15:00 |  | start no earlier than 2010-01-11 08:00 | Robert |
| 7 | Research Rails plugin to handle scheduling | 2h | 2010-01-07 14:30 | 2010-01-07 16:30 |  | start no earlier than 2010-01-07 08:00 | Rob |
| 9 | **Telescope-controlling application** | 0.31d | 2010-01-13 14:30 | 2010-01-13 15:45 |  |  |  |
| 11 | Allow for telescope movement ability from entered celestial coordinates | 1h | 2010-01-13 14:45 | 2010-01-13 15:45 | 10 | start no earlier than 2010-01-13 08:00 | Robert |
| 15 | Create class diagram for telescope-controlling application | 1h | 2010-01-14 14:30 | 2010-01-14 15:30 | 13 | start no earlier than 2010-01-14 08:00 | Robert |
| 16 | Create sequence diagrams for telescope-controlling application | 2h | 2010-01-14 15:30 | 2010-01-14 17:30 | 15 | start no earlier than 2010-01-14 08:00 | Robert |
| 17 | Release #3 | 0d | 2010-01-20 08:00 | 2010-01-20 08:00 |  | start no earlier than 2010-01-20 08:00 | Rob; Robert |
| 20 | **Web system** | 0.88d | 2010-01-20 14:30 | 2010-01-21 16:00 |  |  |  |
| 22 | Add pagination to tables (e.g. schedule log table) | 2.5h | 2010-01-20 14:30 | 2010-01-21 15:00 |  |  | Rob |
| 23 | Changes to schedule log filtering for mobile device views | 1h | 2010-01-20 14:30 | 2010-01-20 15:30 |  |  | Rob |
| 24 | Fix functional tests | 3h | 2010-01-20 14:30 | 2010-01-21 15:30 |  | start no earlier than 2010-01-07 08:00 | Rob |
| 25 | **Telescope-controlling application** | 1.12d | 2010-01-20 14:30 | 2010-01-21 17:00 |  |  |  |
| 26 | Integrate camera to telescope-controlling application | 4.5h | 2010-01-20 14:30 | 2010-01-21 17:00 |  |  | Robert |
| 27 | **Documentation** | 16d | 2010-01-20 14:30 | 2010-03-11 17:00 |  |  |  |
| 28 | Update documentation | 16d | 2010-01-20 14:30 | 2010-03-11 17:00 |  |  | Rob; Robert |
| 29 | Release #4 | 0d | 2010-01-20 08:00 | 2010-01-20 08:00 |  |  | Rob; Robert |
| 31 | **Iteration 7: Release #5** | 2.38d | 2010-03-11 17:00 | 2010-03-18 18:00 | 19 |  |  |
| 32 | **Web system** | 0.88d | 2010-03-18 14:30 | 2010-03-18 18:00 |  |  |  |
| 33 | Implement manual telescope positioning | 3.5h | 2010-03-18 14:30 | 2010-03-18 18:00 | 37 |  | Rob |
| 34 | **Telescope-controlling application** | 2.25d | 2010-03-11 17:00 | 2010-03-18 17:30 |  |  |  |
| 36 | Implement functionality for compiling composite images | 4.5h | 2010-03-11 17:00 | 2010-03-17 15:00 | 26 |  | Robert |
| 37 | Implement ability for streaming images live to the web system | 6h | 2010-03-11 17:00 | 2010-03-17 16:30 | 26 |  | Rob |
| 38 | Implement functionality for image recognition | 6h | 2010-03-15 15:30 | 2010-03-18 17:30 | 35 |  | Robert |
| 39 | **Documentation** | 1d | 2010-03-11 17:00 | 2010-03-15 16:30 |  |  |  |
| 40 | Update documentation | 4h | 2010-03-11 17:00 | 2010-03-15 16:30 |  |  | Rob; Robert |
| 41 | Release #5 | 0d | 2010-03-11 17:00 | 2010-03-11 17:00 |  |  | Rob; Robert |
| 43 | **Iteration 8: Release #6** | 7d | 2010-03-18 18:00 | 2010-04-07 08:00 | 31 |  |  |
| 44 | **Deployment** | 0.25d | 2010-03-18 18:00 | 2010-03-22 14:30 |  |  |  |
| 45 | Deploy systems to production environment | 1h | 2010-03-18 18:00 | 2010-03-22 14:30 |  |  | Rob |
| 46 | Migrate database to PostgreSQL | 45min | 2010-03-18 18:00 | 2010-03-22 14:15 |  |  | Rob |
| 47 | **Documentation** | 1.5d | 2010-03-18 18:00 | 2010-03-25 15:30 |  |  |  |
| 48 | Finalize documentation | 6h | 2010-03-18 18:00 | 2010-03-25 15:30 |  |  | Rob; Robert |
| 49 | Compile final metrics and project statistics | 1h | 2010-03-18 18:00 | 2010-03-22 14:30 |  |  | Robert |
| 50 | Final refactoring | 5h | 2010-03-18 18:00 | 2010-03-24 16:30 |  |  | Rob; Robert |
| 51 | Final user acceptance test | 1h | 2010-03-18 18:00 | 2010-03-22 14:30 |  |  | Rob; Robert |
| 52 | **Final Presentation** | 7d | 2010-03-18 18:00 | 2010-04-07 08:00 |  |  |  |
| 53 | Create PowerPoint for final presentation | 2.5h | 2010-03-18 18:00 | 2010-03-22 16:00 |  |  | Rob; Robert |

Removed: 2 Website; 6 Add pagination to website tables; 7 Integrate libraries (which have celestial objects of interest) with web site; 9 LOW PRIORITY: Remove dropdown select boxes in mobile views; 10 LOW PRIORITY: Fix functional tests; 11 LOW PRIORITY: migrate database to PostgreSQL; 12 Job scheduling; 13 Research Whenever plugin to handle scheduling; 18 Telescope movement; 20 Research telescope movement/positioning with coordinates; 21 LOW PRIORITY: Implement manual telescope positioning; 22 Image recognition; 24 Integrate telescope positioning and image recognition into an application; 25 Integrate camera to system; 26 Transition phase; 27 End refactoring; 28 Final acceptance test

Changed:

| ID | Task | Start | Finish | Duration | Total float | Predecessors | Other |
| --- | --- | --- | --- | --- | --- | --- | --- |
| 3 | Add new online help documentation to website | 2010-01-06 14:30 → 2010-01-11 14:00 (+5d) | 2010-01-07 16:30 → 2010-01-13 15:00 (+6d) | 1d? → 3h | 29.31d → 7.5d |  | constraint none → start no earlier than 2010-01-11 08:00 |
| 4 | Fix CSS with mobile devices | 2010-01-07 16:30 → 2010-01-07 14:30 | 2010-01-07 16:45 → 2010-01-07 14:45 |  | 29.31d → 9.19d | 3 → none |  |
| 5 | Minor refactoring | 2010-01-06 14:30 → 2010-01-07 14:30 (+1d) | 2010-01-06 16:00 → 2010-01-07 16:00 (+1d) |  | 31.5d → 8.88d |  | constraint none → start no earlier than 2010-01-07 08:00 |
| 8 | Create script which includes connection to telescope server | 2010-01-06 14:30 → 2010-01-11 14:00 (+5d) | 2010-01-06 15:30 → 2010-01-11 15:00 (+5d) |  | 31.62d → 8d | none → 7 | constraint none → start no earlier than 2010-01-11 08:00 |
| 10 | Allow for parking the telescope | 2010-01-06 14:30 → 2010-01-13 14:30 (+7d) | 2010-01-06 14:45 → 2010-01-13 14:45 (+7d) |  | 31.81d → 7.31d |  | constraint none → start no earlier than 2010-01-13 08:00 |
| 12 | **Documentation** |  | 2010-01-07 16:30 → 2010-01-14 17:30 (+7d) | 1d → 3.38d | 30.88d → 6.38d |  |  |
| 13 | Documentation updates |  | 2010-01-07 16:30 → 2010-01-06 16:30 (-1d) | 4h → 2h | 30.88d → 8.5d |  | resources Rob → Rob; Robert |
| 14 | Draft acceptance test | 2010-01-06 14:30 → 2010-01-14 14:30 (+8d) | 2010-01-06 15:30 → 2010-01-14 15:30 (+8d) |  | 31.62d → 6.88d |  | constraint none → start no earlier than 2010-01-14 08:00 |
| 19 | **Iteration 6: Release #4** | 2010-01-06 14:30 → 2010-01-20 08:00 (+14d) | 2010-01-13 16:15 → 2010-03-11 17:00 (+57d) | 2.56d? → 16d | 29.31d → 5.5d | none → 1 | was named Construction phase |
| 21 | Implement mail server/mailing system | 2010-01-07 16:45 → 2010-01-20 14:30 (+13d) | 2010-01-11 15:15 → 2010-01-21 16:00 (+10d) | 3h → 3.5h | 29.31d → 20.62d | 4 → none |  |
| 35 | Research image recognition options | 2010-01-06 14:30 → 2010-03-11 17:00 (+64d) | 2010-01-07 15:30 → 2010-03-15 15:30 (+67d) |  | 31.12d → 5.62d |  |  |
| 54 | Final presentation | 2010-04-20 08:00 → 2010-04-07 08:00 (-13d) | 2010-04-20 08:00 → 2010-04-07 08:00 (-13d) |  |  |  | constraint start no earlier than 2010-04-20 08:00 → start no earlier than 2010-04-07 08:00 |
| 55 | Final release | 2010-01-06 08:00 → 2010-04-07 08:00 (+91d) | 2010-01-06 08:00 → 2010-04-07 08:00 (+91d) |  | 31.88d → 0d |  | constraint none → start no earlier than 2010-04-07 08:00 |

## Version 3 (saved 2010-01-11)

Note of the change: minor changes to project plan

Last finish stays 2010-04-07.

Added:

| ID | Task | Duration | Start | Finish | Predecessors | Resources |
| --- | --- | --- | --- | --- | --- | --- |
| 8 | Implementation to handle scheduling of scripts | 2.5h | 2010-01-11 16:00 | 2010-01-13 16:30 | 7 | Rob |

Changed:

| ID | Task | Start | Finish | Duration | Total float | Predecessors | Other |
| --- | --- | --- | --- | --- | --- | --- | --- |
| 2 | **Web system** |  | 2010-01-14 15:00 → 2010-01-18 15:00 (+4d) | 2.25d → 3.38d | 7d → 15.5d |  |  |
| 6 | Integrate libraries (which have celestial objects of interest) to web site | 2010-01-11 14:00 → 2010-01-14 14:30 (+3d) | 2010-01-14 15:00 → 2010-01-18 15:00 (+4d) |  | 7d → 15.5d | none → 5 | constraint start no earlier than 2010-01-11 08:00 → start no earlier than 2010-01-14 08:00 |
| 7 | Research Rails plugin to handle scheduling | 2010-01-07 14:30 → 2010-01-11 14:00 (+4d) | 2010-01-07 16:30 → 2010-01-11 16:00 (+4d) |  | 8.5d → 16.5d |  | constraint start no earlier than 2010-01-07 08:00 → start no earlier than 2010-01-11 08:00 |
| 9 | Create script which includes connection to telescope server | 2010-01-11 14:00 → 2010-01-14 14:30 (+3d) | 2010-01-11 15:00 → 2010-01-14 15:30 (+3d) |  | 8d → 16.5d | 7 → 8 |  |
| 18 | Release #3 |  |  |  | 5.5d → 15.12d | none → 2, 10, 13 |  |
| 19 | **Iteration 6: Release #4** | 2010-01-20 08:00 → 2010-01-20 14:30 | 2010-03-11 17:00 → 2010-02-10 08:00 (-29d) | 16d → 6.38d | 5.5d → 12.75d |  |  |
| 27 | **Documentation** |  | 2010-03-11 17:00 → 2010-02-01 15:30 (-38d) | 16d → 4d | 5.5d → 15.12d |  |  |
| 28 | Update documentation |  | 2010-03-11 17:00 → 2010-02-01 15:30 (-38d) | 16d → 16h | 5.5d → 15.12d |  |  |
| 29 | Release #4 | 2010-01-20 08:00 → 2010-02-10 08:00 (+21d) | 2010-01-20 08:00 → 2010-02-10 08:00 (+21d) |  | 21.5d → 12.75d | none → 20, 25, 27 | constraint none → start no earlier than 2010-02-10 08:00 |
| 30 | **Iteration 7: Release #5** | 2010-03-11 17:00 → 2010-02-10 14:30 (-29d) | 2010-03-18 18:00 → 2010-02-17 15:30 (-29d) |  | 5.5d → 12.75d |  |  |
| 31 | **Web system** | 2010-03-18 14:30 → 2010-02-15 14:00 (-31d) | 2010-03-18 18:00 → 2010-02-17 15:30 (-29d) |  | 5.5d → 12.75d |  |  |
| 32 | Implement manual telescope positioning | 2010-03-18 14:30 → 2010-02-15 14:00 (-31d) | 2010-03-18 18:00 → 2010-02-17 15:30 (-29d) |  | 5.5d → 12.75d |  |  |
| 33 | **Telescope-controlling application** | 2010-03-11 17:00 → 2010-02-10 14:30 (-29d) | 2010-03-18 17:30 → 2010-02-17 15:00 (-29d) |  | 5.5d → 12.75d |  |  |
| 34 | Research image recognition options | 2010-03-11 17:00 → 2010-02-10 14:30 (-29d) | 2010-03-15 15:30 → 2010-02-11 15:30 (-32d) |  | 5.62d → 12.88d |  |  |
| 35 | Implement functionality for compiling composite images | 2010-03-11 17:00 → 2010-02-10 14:30 (-29d) | 2010-03-17 15:00 → 2010-02-11 17:00 (-34d) |  | 6.75d → 14d |  |  |
| 36 | Implement ability for streaming images live to the web system | 2010-03-11 17:00 → 2010-02-10 14:30 (-29d) | 2010-03-17 16:30 → 2010-02-11 18:30 (-34d) |  | 5.5d → 12.75d |  |  |
| 37 | Implement functionality for image recognition | 2010-03-15 15:30 → 2010-02-11 15:30 (-32d) | 2010-03-18 17:30 → 2010-02-17 15:00 (-29d) |  | 5.62d → 12.88d |  |  |
| 38 | **Documentation** | 2010-03-11 17:00 → 2010-02-10 14:30 (-29d) | 2010-03-15 16:30 → 2010-02-11 16:30 (-32d) |  | 6.88d → 14.12d |  |  |
| 39 | Update documentation | 2010-03-11 17:00 → 2010-02-10 14:30 (-29d) | 2010-03-15 16:30 → 2010-02-11 16:30 (-32d) |  | 6.88d → 14.12d |  |  |
| 40 | Release #5 | 2010-03-11 17:00 → 2010-02-17 15:30 (-22d) | 2010-03-11 17:00 → 2010-02-17 15:30 (-22d) |  | 7.88d → 12.75d | none → 31, 33, 38 |  |
| 41 | **Iteration 8: Release #6** | 2010-03-18 18:00 → 2010-02-17 15:30 (-29d) |  | 7d → 16.62d |  |  |  |
| 42 | Final refactoring | 2010-03-18 18:00 → 2010-02-17 15:30 (-29d) | 2010-03-24 16:30 → 2010-02-18 18:30 (-34d) |  | 5.75d → 12.75d |  |  |
| 43 | **Deployment** | 2010-03-18 18:00 → 2010-02-22 14:00 (-24d) | 2010-03-22 14:30 → 2010-02-22 15:00 (-28d) |  | 6.75d → 12.75d | none → 42 |  |
| 44 | Deploy systems to production environment | 2010-03-18 18:00 → 2010-02-22 14:00 (-24d) | 2010-03-22 14:30 → 2010-02-22 15:00 (-28d) |  | 6.75d → 12.75d |  |  |
| 45 | Migrate database to PostgreSQL | 2010-03-18 18:00 → 2010-02-22 14:00 (-24d) | 2010-03-22 14:15 → 2010-02-22 14:45 (-28d) |  | 6.81d → 12.81d |  |  |
| 46 | **Documentation** | 2010-03-18 18:00 → 2010-02-22 15:00 (-24d) | 2010-03-25 15:30 → 2010-02-25 18:00 (-28d) | 1.5d → 1.75d | 5.5d → 12.75d | none → 43 |  |
| 47 | Finalize documentation | 2010-03-18 18:00 → 2010-02-22 15:00 (-24d) | 2010-03-25 15:30 → 2010-02-25 17:00 (-28d) |  | 5.5d → 12.75d |  |  |
| 48 | Compile final metrics and project statistics | 2010-03-18 18:00 → 2010-02-25 17:00 (-21d) | 2010-03-22 14:30 → 2010-02-25 18:00 (-25d) |  | 6.75d → 12.75d | none → 47 |  |
| 49 | Final user acceptance test | 2010-03-18 18:00 → 2010-02-17 15:30 (-29d) | 2010-03-22 14:30 → 2010-02-17 16:30 (-33d) |  | 6.75d → 16.38d |  |  |
| 50 | **Final Presentation** | 2010-03-18 18:00 → 2010-02-25 18:00 (-21d) |  | 7d → 13.38d |  | none → 46 |  |
| 51 | Create PowerPoint for final presentation | 2010-03-18 18:00 → 2010-02-25 18:00 (-21d) | 2010-03-22 16:00 → 2010-03-01 16:00 (-21d) |  | 6.38d → 12.75d |  |  |
| 52 | Present project to OC faculty and audience |  |  |  |  | none → 51 | was named Final presentation |
| 53 | Final release |  |  |  |  | none → 50, 43, 46 |  |

## Version 4 (saved 2010-01-14)

Note of the change: updated user's guide and architecture diagram

Last finish stays 2010-04-07. Complete tasks 0 → 2.

Changed:

| ID | Task | Start | Finish | Complete | Total float |
| --- | --- | --- | --- | --- | --- |
| 1 | **Iteration 5: Release #3** | 2010-01-06 14:30 A |  | 0% → 8% | 6.12d → 15.12d |
| 2 | **Web system** | 2010-01-07 14:30 A |  | 0% → 11% |  |
| 4 | Fix CSS with mobile devices | 2010-01-07 14:30 A | 2010-01-07 14:45 A | 0% → 100% | 18.81d → none |
| 5 | Minor refactoring | 2010-01-07 14:30 A | 2010-01-07 16:00 A | 0% → 100% | 17.25d → none |

## Version 5 (saved 2010-01-21)

Note of the change: changes before meeting

Last finish stays 2010-04-07. Complete tasks 2 → 8.

Added:

| ID | Task | Duration | Start | Finish | Predecessors | Constraint | Resources |
| --- | --- | --- | --- | --- | --- | --- | --- |
| 7 | Download and install Oracle 10g XE on telescope server | 1.5h | 2010-01-14 14:30 A | 2010-01-14 16:00 A | 6 | start no earlier than 2010-01-14 08:00 | Rob |
| 8 | Install Oracle client on web server | 1h | 2010-01-21 14:30 | 2010-01-21 15:30 |  | start no earlier than 2010-01-21 08:00 | Rob |
| 9 | Configure Rails environment to now use the Oracle 10g XE database | 1h | 2010-01-14 16:00 A | 2010-01-14 17:00 A | 7 | start no earlier than 2010-01-14 08:00 | Rob |
| 11 | Test connections and scheduling jobs | 2h | 2010-01-18 14:00 A | 2010-01-18 16:00 A | 9 | start no earlier than 2010-01-18 08:00 | Rob |
| 17 | Metrics gathering | 1.5h | 2010-01-06 14:30 A | 2010-01-06 16:00 |  |  | Rob |
| 30 | Create unit tests for telescope-controlling application | 2.5h | 2010-02-04 14:30 | 2010-02-04 17:00 | 12 | start no earlier than 2010-02-04 08:00 | Robert |
| 36 | **Web system** | 1d | 2010-02-04 17:30 | 2010-02-10 15:00 |  |  |  |
| 39 | **Telescope-controlling application** | 1.5d | 2010-02-04 17:30 | 2010-02-11 15:00 |  |  |  |
| 42 | **Documentation** | 3.5d | 2010-02-04 17:30 | 2010-02-18 08:00 |  |  |  |
| 43 | Update documentation | 4h | 2010-02-04 17:30 | 2010-02-10 15:00 |  |  | Rob; Robert |
| 44 | Create sequence diagrams for web application | 2h | 2010-02-04 17:30 | 2010-02-08 15:00 |  |  | Robert |
| 55 | Release #6 | 0d | 2010-03-04 08:00 | 2010-03-04 08:00 | 48, 50, 53 | start no earlier than 2010-03-04 08:00 | Rob; Robert |
| 57 | **Iteration 9: Release #7** | 12.12d | 2010-03-04 14:30 | 2010-04-07 08:00 | 47 |  |  |

Removed: 8 Implementation to handle scheduling of scripts; 45 Migrate database to PostgreSQL

Changed:

| ID | Task | Start | Finish | Duration | Complete | Total float | Predecessors | Other |
| --- | --- | --- | --- | --- | --- | --- | --- | --- |
| 1 | **Iteration 5: Release #3** |  | 2010-01-20 08:00 → 2010-01-21 16:30 (+1d) | 4.25d → 5.25d | 8% → 63% | 15.12d → 12.75d |  |  |
| 2 | **Web system** |  | 2010-01-18 15:00 → 2010-01-21 16:30 (+3d) | 3.38d → 4.75d | 11% → 79% | 15.5d → 12.75d |  |  |
| 3 | Add new online help documentation to website | 2010-01-11 14:00 A | 2010-01-13 15:00 A |  | 0% → 100% | 17.12d → none |  |  |
| 6 | Research Rails plugin to handle scheduling | 2010-01-11 14:00 A | 2010-01-11 16:00 A |  | 0% → 100% | 16.5d → none |  |  |
| 10 | Create triggers/batch file to run application | 2010-01-14 14:30 → 2010-01-21 14:30 (+7d) | 2010-01-14 15:30 → 2010-01-21 16:30 (+7d) | 1h → 2h |  | 16.5d → 12.75d | Implementation to handle scheduling of scripts → 11 | was named Create script which includes connection to telescope server; constraint start no earlier than 2010-01-11 08:00 → start no earlier than 2010-01-21 08:00 |
| 12 | **Telescope-controlling application** | 2010-01-13 14:30 → 2010-01-14 14:30 A (+1d) | 2010-01-13 15:45 → 2010-01-14 17:30 (+1d) | 0.31d → 0.75d | 0% → 67% | 4.94d → 14.62d |  |  |
| 13 | Allow for parking the telescope | 2010-01-13 14:30 → 2010-01-14 14:30 (+1d) | 2010-01-13 14:45 → 2010-01-14 15:30 (+1d) | 15min → 1h |  | 16.94d → 15.12d |  | constraint start no earlier than 2010-01-13 08:00 → start no earlier than 2010-01-14 08:00 |
| 14 | Allow for telescope movement ability from entered celestial coordinates | 2010-01-13 14:45 → 2010-01-14 15:30 A (+1d) | 2010-01-13 15:45 → 2010-01-14 17:30 A (+1d) | 1h → 2h | 0% → 100% | 16.94d → none |  | constraint start no earlier than 2010-01-13 08:00 → start no earlier than 2010-01-14 08:00 |
| 15 | **Documentation** | 2010-01-06 14:30 A | 2010-01-14 17:30 → 2010-01-18 15:00 (+4d) | 3.38d → 3.88d | 0% → 33% | 4d → 14.12d |  |  |
| 16 | Documentation updates | 2010-01-06 14:30 A | 2010-01-06 16:30 → 2010-01-07 17:30 (+1d) | 2h → 5h | 0% → 34% | 18.12d → 16.75d |  |  |
| 18 | Draft acceptance test | 2010-01-14 14:30 → 2010-01-18 14:00 (+4d) | 2010-01-14 15:30 → 2010-01-18 15:00 (+4d) |  |  | 16.5d → 14.12d |  | constraint start no earlier than 2010-01-14 08:00 → start no earlier than 2010-01-18 08:00 |
| 19 | Release #3 | 2010-01-20 08:00 → 2010-01-21 16:30 (+1d) | 2010-01-20 08:00 → 2010-01-21 16:30 (+1d) |  |  | 15.12d → 12.75d |  | constraint start no earlier than 2010-01-20 08:00 → start no earlier than 2010-01-21 08:00 |
| 21 | **Iteration 6: Release #4** | 2010-01-20 14:30 → 2010-01-21 16:30 (+1d) | 2010-02-10 08:00 → 2010-02-04 17:30 (-6d) | 6.38d → 4.5d |  | 12.75d → 12.25d |  |  |
| 22 | **Web system** | 2010-01-20 14:30 → 2010-01-25 14:00 (+5d) | 2010-01-21 16:00 → 2010-01-28 15:30 (+7d) | 0.88d → 1.38d |  | 18.25d → 14.88d |  |  |
| 23 | Integrate libraries (which have celestial objects of interest) to web site | 2010-01-14 14:30 → 2010-01-25 14:00 (+11d) | 2010-01-18 15:00 → 2010-01-28 15:00 (+10d) |  |  | 15.5d → 15d | 5 → none | constraint start no earlier than 2010-01-14 08:00 → start no earlier than 2010-01-25 08:00 |
| 24 | Add pagination to tables (e.g. schedule log table) | 2010-01-20 14:30 → 2010-01-25 14:00 (+5d) | 2010-01-21 15:00 → 2010-01-27 15:00 (+6d) | 2.5h → 3h |  | 18.5d → 15.5d |  | constraint none → start no earlier than 2010-01-25 08:00 |
| 25 | Changes to schedule log filtering for mobile device views | 2010-01-20 14:30 → 2010-01-28 14:30 (+8d) | 2010-01-20 15:30 → 2010-01-28 15:30 (+8d) |  |  | 18.88d → 14.88d |  | constraint none → start no earlier than 2010-01-28 08:00 |
| 26 | **Telescope-controlling application** | 2010-01-20 14:30 → 2010-01-28 14:30 (+8d) | 2010-01-21 17:00 → 2010-02-01 14:30 (+11d) |  |  | 18d → 14d |  |  |
| 27 | Integrate camera to telescope-controlling application | 2010-01-20 14:30 → 2010-01-28 14:30 (+8d) | 2010-01-21 17:00 → 2010-02-01 14:30 (+11d) |  |  | 18d → 14d |  | constraint none → start no earlier than 2010-01-28 08:00 |
| 28 | **Documentation** | 2010-01-20 14:30 → 2010-01-21 16:30 (+1d) | 2010-02-01 15:30 → 2010-02-04 17:30 (+3d) | 4d → 4.5d |  | 15.12d → 12.25d |  |  |
| 29 | Update documentation | 2010-01-20 14:30 → 2010-01-21 16:30 (+1d) | 2010-02-01 15:30 → 2010-02-04 15:30 (+3d) |  |  | 15.12d → 12.75d |  |  |
| 31 | Create class diagram for telescope-controlling application | 2010-01-14 14:30 → 2010-02-04 14:30 (+21d) | 2010-01-14 15:30 → 2010-02-04 15:30 (+21d) |  |  | 16d → 12.25d |  | constraint start no earlier than 2010-01-14 08:00 → start no earlier than 2010-02-04 08:00 |
| 32 | Create sequence diagrams for telescope-controlling application | 2010-01-14 15:30 → 2010-02-04 15:30 (+21d) | 2010-01-14 17:30 → 2010-02-04 17:30 (+21d) |  |  | 16d → 12.25d |  | constraint start no earlier than 2010-01-14 08:00 → start no earlier than 2010-01-21 08:00 |
| 33 | Release #4 | 2010-02-10 08:00 → 2010-02-04 17:30 (-6d) | 2010-02-10 08:00 → 2010-02-04 17:30 (-6d) |  |  | 12.75d → 12.25d |  | constraint start no earlier than 2010-02-10 08:00 → start no earlier than 2010-02-04 08:00 |
| 35 | **Iteration 7: Release #5** | 2010-02-10 14:30 → 2010-02-04 17:30 (-6d) | 2010-02-17 15:30 → 2010-02-18 08:00 (+1d) | 2.38d → 3.5d |  | 12.75d → 10.25d |  |  |
| 37 | Implement mail server/mailing system | 2010-01-20 14:30 → 2010-02-04 17:30 (+15d) | 2010-01-21 16:00 → 2010-02-10 15:00 (+20d) | 3.5h → 4h |  | 18.25d → 12.75d |  |  |
| 38 | Fix functional tests | 2010-01-20 14:30 → 2010-02-04 17:30 (+15d) | 2010-01-21 15:30 → 2010-02-08 16:00 (+18d) |  |  | 18.38d → 13d |  |  |
| 40 | Implement functionality for compiling composite images | 2010-02-10 14:30 → 2010-02-04 17:30 (-6d) | 2010-02-11 17:00 → 2010-02-10 15:30 (-1d) |  |  | 14d → 12.62d |  |  |
| 41 | Implement ability for streaming images live to the web system | 2010-02-10 14:30 → 2010-02-04 17:30 (-6d) | 2010-02-11 18:30 → 2010-02-11 15:00 |  |  | 12.75d → 12.25d |  |  |
| 45 | Release #5 | 2010-02-17 15:30 → 2010-02-18 08:00 (+1d) | 2010-02-17 15:30 → 2010-02-18 08:00 (+1d) |  |  | 12.75d → 10.25d | 48, 50, 53 → none | constraint none → start no earlier than 2010-02-18 08:00 |
| 47 | **Iteration 8: Release #6** | 2010-02-17 15:30 → 2010-02-18 14:30 (+1d) | 2010-04-07 08:00 → 2010-03-04 08:00 (-34d) | 16.62d → 4.25d |  | 0d → 8.25d |  |  |
| 48 | **Web system** | 2010-02-15 14:00 → 2010-02-18 14:30 (+3d) | 2010-02-17 15:30 → 2010-02-18 18:00 (+1d) |  |  | 12.75d → 11.62d |  |  |
| 49 | Implement manual telescope positioning | 2010-02-15 14:00 → 2010-02-18 14:30 (+3d) | 2010-02-17 15:30 → 2010-02-18 18:00 (+1d) |  |  | 12.75d → 11.62d |  |  |
| 50 | **Telescope-controlling application** | 2010-02-10 14:30 → 2010-02-18 14:30 (+8d) | 2010-02-17 15:00 → 2010-02-25 15:00 (+8d) |  |  | 12.75d → 10.25d |  |  |
| 51 | Research image recognition options | 2010-02-10 14:30 → 2010-02-18 14:30 (+8d) | 2010-02-11 15:30 → 2010-02-18 17:30 (+7d) |  |  | 12.88d → 10.25d |  |  |
| 52 | Implement functionality for image recognition | 2010-02-11 15:30 → 2010-02-18 17:30 (+7d) | 2010-02-17 15:00 → 2010-02-25 15:00 (+8d) |  |  | 12.88d → 10.25d |  |  |
| 53 | **Documentation** | 2010-02-10 14:30 → 2010-02-18 14:30 (+8d) | 2010-02-11 16:30 → 2010-02-18 18:30 (+7d) |  |  | 14.12d → 11.5d |  |  |
| 54 | Update documentation | 2010-02-10 14:30 → 2010-02-18 14:30 (+8d) | 2010-02-11 16:30 → 2010-02-18 18:30 (+7d) |  |  | 14.12d → 11.5d |  |  |
| 58 | Final refactoring | 2010-02-17 15:30 → 2010-03-04 14:30 (+15d) | 2010-02-18 18:30 → 2010-03-08 15:00 (+18d) |  |  | 12.75d → 8.25d |  |  |
| 59 | **Deployment** | 2010-02-22 14:00 → 2010-03-08 15:00 (+14d) | 2010-02-22 15:00 → 2010-03-08 16:00 (+14d) |  |  | 12.75d → 8.25d |  |  |
| 60 | Deploy systems to production environment | 2010-02-22 14:00 → 2010-03-08 15:00 (+14d) | 2010-02-22 15:00 → 2010-03-08 16:00 (+14d) |  |  | 12.75d → 8.25d |  |  |
| 61 | **Documentation** | 2010-02-22 15:00 → 2010-03-08 16:00 (+14d) | 2010-02-25 18:00 → 2010-03-15 14:30 (+18d) |  |  | 12.75d → 8.25d |  |  |
| 62 | Finalize documentation | 2010-02-22 15:00 → 2010-03-08 16:00 (+14d) | 2010-02-25 17:00 → 2010-03-11 18:00 (+14d) |  |  | 12.75d → 8.25d |  |  |
| 63 | Compile final metrics and project statistics | 2010-02-25 17:00 → 2010-03-11 18:00 (+14d) | 2010-02-25 18:00 → 2010-03-15 14:30 (+18d) |  |  | 12.75d → 8.25d |  |  |
| 64 | Final user acceptance test | 2010-02-17 15:30 → 2010-03-04 14:30 (+15d) | 2010-02-17 16:30 → 2010-03-04 15:30 (+15d) |  |  | 16.38d → 11.88d |  |  |
| 65 | **Final Presentation** | 2010-02-25 18:00 → 2010-03-15 14:30 (+18d) |  | 13.38d → 8.88d |  |  |  |  |
| 66 | Create PowerPoint for final presentation | 2010-02-25 18:00 → 2010-03-15 14:30 (+18d) | 2010-03-01 16:00 → 2010-03-17 15:00 (+16d) |  |  | 12.75d → 8.25d |  |  |
| 68 | Final release |  |  |  |  |  |  | constraint start no earlier than 2010-04-07 08:00 → start no earlier than 2010-03-18 08:00 |

## Version 6 (saved 2010-01-23)

Note of the change: docs for meeting #1 - semester 2

Last finish stays 2010-04-07. Complete tasks 8 → 10.

Added:

| ID | Task | Duration | Start | Finish | Predecessors | Constraint | Resources |
| --- | --- | --- | --- | --- | --- | --- | --- |
| 15 | Test driver for all commands | 2h | 2010-01-06 14:30 | 2010-01-06 16:30 |  |  | Robert |
| 24 | Add scheduled job for parking telescope | 2.5h | 2010-01-21 16:30 | 2010-01-25 14:30 | 13 |  | Rob |
| 27 | Add image copying to batch file/job scheduling | 2h | 2010-01-21 16:30 | 2010-01-21 18:30 |  |  | Rob |
| 29 | Create test program to handle image taking with specific parameters | 4.5h | 2010-01-21 16:30 | 2010-01-25 16:30 |  |  | Robert |
| 33 | More metrics gathering | 2h | 2010-01-21 16:30 | 2010-01-21 18:30 | 18 |  | Robert |
| 37 | Create system-sequence diagrams | 2h | 2010-01-25 14:00 | 2010-01-25 16:00 |  | start no earlier than 2010-01-25 08:00 | Robert |
| 38 | Create activity diagrams | 3h | 2010-02-01 14:00 | 2010-02-03 15:00 |  | start no earlier than 2010-02-01 08:00 | Robert |
| 39 | Create state diagrams | 3h | 2010-02-01 14:00 | 2010-02-03 15:00 |  | start no earlier than 2010-02-01 08:00 | Robert |
| 44 | Install mailing server | 1h | 2010-02-04 17:30 | 2010-02-04 18:30 |  |  | Rob |
| 59 | Integrate image recognition program with telescope-controlling application | 1.5h | 2010-02-22 16:00 | 2010-02-24 15:30 | 58 |  | Robert |
| 60 | Create scheduled email job which will email operators when new objects are found | 2h | 2010-02-22 16:00 | 2010-02-24 16:00 | 58 |  | Rob |
| 71 | System testing | 2h | 2010-03-08 16:00 | 2010-03-10 16:00 |  |  | Rob; Robert |
| 72 | Integration testing | 3h | 2010-03-08 16:00 | 2010-03-11 15:00 |  |  | Robert |

Changed:

| ID | Task | Start | Finish | Duration | Complete | Total float | Predecessors | Other |
| --- | --- | --- | --- | --- | --- | --- | --- | --- |
| 1 | **Iteration 5: Release #4: Automated Scheduling and Telescope Positioning** |  |  |  | 63% → 65% | 12.75d → 12.25d |  | was named Iteration 5: Release #3 |
| 12 | **Telescope-controlling application** | 2010-01-14 14:30 A → 2010-01-06 14:30 A (-8d) |  | 0.75d → 3.38d | 67% → 60% | 14.62d → 14.12d |  |  |
| 13 | Allow for parking the telescope | 2010-01-14 14:30 A | 2010-01-14 15:30 A |  | 0% → 100% | 15.12d → none |  |  |
| 16 | **Documentation** |  |  |  | 33% → 43% | 14.12d → 13.62d |  |  |
| 18 | Metrics gathering |  | 2010-01-06 16:00 A |  | 50% → 100% | 17.62d → none |  |  |
| 20 | Release #4: Automated Scheduling and Telescope Positioning |  |  |  |  | 12.75d → 12.25d |  | was named Release #3 |
| 22 | **Iteration 6: Release #5: Automated Image Gathering** |  |  |  |  | 12.25d → 11.75d |  | was named Iteration 6: Release #4 |
| 23 | **Web system** | 2010-01-25 14:00 → 2010-01-21 16:30 (-4d) | 2010-01-28 15:30 → 2010-01-28 15:00 | 1.38d → 1.75d |  | 14.88d → 14.5d |  |  |
| 25 | Integrate libraries (which have celestial objects of interest) to web site |  |  |  |  | 15d → 14.5d |  | resources Robert → Robert; Rob |
| 26 | Add pagination to tables (e.g. schedule log table) |  | 2010-01-27 15:00 → 2010-01-27 16:00 | 3h → 4h |  | 15.5d → 14.75d |  |  |
| 28 | **Telescope-controlling application** | 2010-01-28 14:30 → 2010-01-21 16:30 (-7d) | 2010-02-01 14:30 → 2010-01-28 15:00 (-4d) | 1.12d → 1.75d |  | 14d → 14.5d |  |  |
| 30 | Integrate camera to telescope-controlling application |  | 2010-02-01 14:30 → 2010-01-28 15:00 (-4d) | 4.5h → 0.5h |  | 14d → 14.5d |  |  |
| 40 | Release #5: Automated Image Gathering |  |  |  |  | 12.25d → 11.75d |  | was named Release #4 |
| 42 | **Iteration 7: Release #6: Automated Composite Image Compilation** |  |  |  |  | 10.25d → 9.38d |  | was named Iteration 7: Release #5 |
| 45 | Implement Oracle PL/SQL procedure to handle email notifications |  |  |  |  | 12.75d → 11.88d |  | was named Implement mail server/mailing system |
| 46 | **Telescope-controlling application** |  | 2010-02-11 15:00 → 2010-02-10 15:30 (-1d) | 1.5d → 1.12d |  | 12.25d → 11.75d |  |  |
| 48 | Research image recognition options | 2010-02-18 14:30 → 2010-02-04 17:30 (-14d) | 2010-02-18 17:30 → 2010-02-08 16:00 (-10d) |  |  | 10.25d → 12.12d |  |  |
| 52 | Release #6: Automated Composite Image Compilation |  |  |  |  | 10.25d → 9.38d |  | was named Release #5 |
| 54 | **Iteration 8: Release #7: Image Recognition** |  |  |  |  | 8.25d → 7.5d |  | was named Iteration 8: Release #6 |
| 55 | **Web system** | 2010-02-18 14:30 → 2010-02-22 16:00 (+4d) | 2010-02-18 18:00 → 2010-02-25 15:30 (+7d) |  |  | 11.62d → 9.38d |  |  |
| 56 | Implement manual telescope positioning | 2010-02-18 14:30 → 2010-02-22 16:00 (+4d) | 2010-02-18 18:00 → 2010-02-25 15:30 (+7d) |  |  | 11.62d → 9.38d |  |  |
| 57 | **Telescope-controlling application** |  | 2010-02-25 15:00 → 2010-02-24 16:00 (-1d) | 2.25d → 2d |  | 10.25d → 9.38d |  |  |
| 58 | Implement functionality for image recognition | 2010-02-18 17:30 → 2010-02-18 14:30 | 2010-02-25 15:00 → 2010-02-22 16:00 (-3d) |  |  | 10.25d → 9.75d | 48 → none |  |
| 61 | Implement ability for streaming images live to the web system | 2010-02-04 17:30 → 2010-02-18 14:30 (+14d) | 2010-02-11 15:00 → 2010-02-22 16:00 (+11d) |  |  | 12.25d → 9.38d |  |  |
| 64 | Release #7: Image Recognition |  |  |  |  | 8.25d → 7.5d |  | was named Release #6 |
| 66 | **Iteration 9: Release #8: Refactored Final Release** |  |  |  |  |  |  | was named Iteration 9: Release #7 |
| 68 | Changes to schedule log filtering for mobile device views | 2010-01-28 14:30 → 2010-03-08 15:00 (+39d) | 2010-01-28 15:30 → 2010-03-08 16:00 (+39d) |  |  | 14.88d → 7.5d | none → 67 |  |
| 69 | **Deployment and End Testing** | 2010-03-08 15:00 → 2010-03-08 16:00 | 2010-03-08 16:00 → 2010-03-11 15:00 (+3d) | 0.25d → 0.75d |  | 8.25d → 7.5d | 67 → 68 | was named Deployment |
| 70 | Fix functional tests | 2010-02-04 17:30 → 2010-03-08 16:00 (+32d) | 2010-02-08 16:00 → 2010-03-11 15:00 (+31d) |  |  | 13d → 7.5d |  |  |
| 73 | Final user acceptance test | 2010-03-04 14:30 → 2010-03-08 16:00 (+4d) | 2010-03-04 15:30 → 2010-03-10 15:00 (+6d) |  |  | 11.88d → 8d |  |  |
| 74 | Deploy systems to production environment | 2010-03-08 15:00 → 2010-03-08 16:00 | 2010-03-08 16:00 → 2010-03-10 15:00 (+2d) |  |  | 8.25d → 8d |  |  |
| 75 | **Documentation** | 2010-03-08 16:00 → 2010-03-11 15:00 (+3d) | 2010-03-15 14:30 → 2010-03-17 15:30 (+2d) |  |  | 8.25d → 7.5d |  |  |
| 76 | Finalize documentation | 2010-03-08 16:00 → 2010-03-11 15:00 (+3d) | 2010-03-11 18:00 → 2010-03-15 16:30 (+4d) |  |  | 8.25d → 7.5d |  |  |
| 77 | Compile final metrics and project statistics | 2010-03-11 18:00 → 2010-03-17 14:30 (+6d) | 2010-03-15 14:30 → 2010-03-17 15:30 (+2d) |  |  | 8.25d → 7.5d |  |  |
| 78 | **Final Presentation** | 2010-03-15 14:30 → 2010-03-17 15:30 (+2d) |  | 8.88d → 8.12d |  |  |  |  |
| 79 | Create PowerPoint for final presentation | 2010-03-15 14:30 → 2010-03-17 15:30 (+2d) | 2010-03-17 15:00 → 2010-03-18 16:00 (+1d) |  |  | 8.25d → 7.5d |  |  |

## Version 7 (saved 2010-02-04)

Note of the change: some changes for meeting 2

Last finish stays 2010-04-07. Complete tasks 10 → 11.

Changed:

| ID | Task | Start | Finish | Duration | Complete | Total float | Predecessors | Other |
| --- | --- | --- | --- | --- | --- | --- | --- | --- |
| 1 | **Iteration 5: Release #4: Automated Scheduling and Telescope Positioning** |  | 2010-01-21 16:30 → 2010-02-04 08:00 (+14d) | 5.25d → 9d | 65% → 73% | 12.25d → 5.75d |  |  |
| 2 | **Web system** | 2010-01-07 14:30 A → 2010-01-06 14:30 A (-1d) | 2010-01-21 16:30 → 2010-01-20 16:00 (-1d) | 4.75d → 4.62d |  | 12.25d → 10.12d |  |  |
| 8 | Install Oracle client on web server | 2010-01-21 14:30 → 2010-01-06 14:30 (-15d) | 2010-01-21 15:30 → 2010-01-06 15:30 (-15d) |  |  | 12.5d → 14.5d |  | constraint start no earlier than 2010-01-21 08:00 → none |
| 10 | Create triggers/batch file to run application | 2010-01-21 14:30 → 2010-01-18 16:00 (-3d) | 2010-01-21 16:30 → 2010-01-20 16:00 (-1d) |  |  | 12.25d → 10.12d |  | constraint start no earlier than 2010-01-21 08:00 → none |
| 12 | **Telescope-controlling application** |  | 2010-01-14 17:30 A |  | 60% → 100% | 14.12d → none |  |  |
| 15 | Test driver for all commands | 2010-01-06 14:30 A | 2010-01-06 16:30 A |  | 0% → 100% | 17d → none |  |  |
| 16 | **Documentation** |  | 2010-01-18 15:00 → 2010-01-07 17:30 (-11d) | 3.88d → 1.25d |  | 13.62d → 13.5d |  |  |
| 19 | Draft acceptance test | 2010-01-18 14:00 → 2010-01-06 14:30 (-12d) | 2010-01-18 15:00 → 2010-01-06 15:30 (-12d) |  |  | 13.62d → 14.5d |  | constraint start no earlier than 2010-01-18 08:00 → none |
| 20 | Release #4: Automated Scheduling and Telescope Positioning | 2010-01-21 16:30 → 2010-02-04 08:00 (+14d) | 2010-01-21 16:30 → 2010-02-04 08:00 (+14d) |  |  | 12.25d → 5.75d |  | constraint start no earlier than 2010-01-21 08:00 → start no earlier than 2010-02-04 08:00 |
| 22 | **Iteration 6: Release #5: Automated Image Gathering** | 2010-01-21 16:30 → 2010-02-04 14:30 (+14d) | 2010-02-04 17:30 → 2010-02-18 08:00 (+14d) | 4.5d → 4.25d |  | 11.75d → 5.75d |  |  |
| 23 | **Web system** | 2010-01-21 16:30 → 2010-02-04 14:30 (+14d) | 2010-01-28 15:00 → 2010-02-17 16:30 (+20d) | 1.75d → 4.25d |  | 14.5d → 5.75d |  |  |
| 24 | Add scheduled job for parking telescope | 2010-01-21 16:30 → 2010-02-04 14:30 (+14d) | 2010-01-25 14:30 → 2010-02-04 17:30 (+10d) | 2.5h → 3h |  | 15.62d → 5.75d |  |  |
| 25 | Integrate libraries (which have celestial objects of interest) to web site | 2010-01-25 14:00 → 2010-02-04 17:30 (+10d) | 2010-01-28 15:00 → 2010-02-11 15:00 (+14d) | 5h → 6h |  | 14.5d → 5.75d | none → 24 | constraint start no earlier than 2010-01-25 08:00 → none |
| 26 | Add pagination to tables (e.g. schedule log table) | 2010-01-25 14:00 → 2010-02-11 15:00 (+17d) | 2010-01-27 16:00 → 2010-02-15 15:30 (+19d) | 4h → 5h |  | 14.75d → 5.75d | none → 25 | constraint start no earlier than 2010-01-25 08:00 → none |
| 27 | Add image copying to batch file/job scheduling | 2010-01-21 16:30 → 2010-02-15 15:30 (+25d) | 2010-01-21 18:30 → 2010-02-17 16:30 (+27d) | 2h → 3h |  | 15.75d → 5.75d | none → 26 |  |
| 28 | **Telescope-controlling application** | 2010-01-21 16:30 → 2010-02-04 14:30 (+14d) | 2010-01-28 15:00 → 2010-02-08 15:00 (+11d) | 1.75d → 1.25d |  | 14.5d → 8.75d |  |  |
| 29 | Create test program to handle image taking with specific parameters | 2010-01-21 16:30 → 2010-02-04 14:30 (+14d) | 2010-01-25 16:30 → 2010-02-08 14:30 (+14d) |  |  | 15.12d → 8.75d | none → 20 |  |
| 30 | Integrate camera to telescope-controlling application | 2010-01-28 14:30 → 2010-02-08 14:30 (+11d) | 2010-01-28 15:00 → 2010-02-08 15:00 (+11d) |  |  | 14.5d → 8.75d | none → 29 | constraint start no earlier than 2010-01-28 08:00 → none |
| 31 | **Documentation** | 2010-01-21 16:30 → 2010-02-04 14:30 (+14d) | 2010-02-04 17:30 → 2010-02-17 15:30 (+13d) | 4.5d → 4d |  | 11.75d → 6d |  |  |
| 32 | Update documentation | 2010-01-21 16:30 → 2010-02-04 14:30 (+14d) | 2010-02-04 15:30 → 2010-02-17 15:30 (+13d) |  |  | 12.25d → 6d | none → 20 |  |
| 33 | More metrics gathering | 2010-01-21 16:30 → 2010-02-04 14:30 (+14d) | 2010-01-21 18:30 → 2010-02-04 16:30 (+14d) |  |  | 15.75d → 9.5d |  |  |
| 34 | Create unit tests for telescope-controlling application |  |  |  |  | 11.88d → 9.38d |  | constraint start no earlier than 2010-02-04 08:00 → none |
| 35 | Create class diagram for telescope-controlling application |  |  |  |  | 11.75d → 7.25d |  | constraint start no earlier than 2010-02-04 08:00 → none |
| 36 | Create sequence diagrams for telescope-controlling application |  |  |  |  | 11.75d → 7.25d |  | constraint start no earlier than 2010-01-21 08:00 → none |
| 37 | Create system-sequence diagrams | 2010-01-25 14:00 → 2010-02-04 17:30 (+10d) | 2010-01-25 16:00 → 2010-02-08 15:00 (+14d) |  |  | 15.25d → 7.25d | none → 36 | constraint start no earlier than 2010-01-25 08:00 → none |
| 38 | Create activity diagrams | 2010-02-01 14:00 → 2010-02-08 15:00 (+7d) | 2010-02-03 15:00 → 2010-02-10 16:00 (+7d) |  |  | 12.88d → 7.25d | none → 37 | constraint start no earlier than 2010-02-01 08:00 → none |
| 39 | Create state diagrams | 2010-02-01 14:00 → 2010-02-10 16:00 (+9d) | 2010-02-03 15:00 → 2010-02-11 17:00 (+8d) |  |  | 12.88d → 7.25d | none → 38 | constraint start no earlier than 2010-02-01 08:00 → none |
| 40 | Release #5: Automated Image Gathering | 2010-02-04 17:30 → 2010-02-18 08:00 (+14d) | 2010-02-04 17:30 → 2010-02-18 08:00 (+14d) |  |  | 11.75d → 5.75d |  | constraint start no earlier than 2010-02-04 08:00 → start no earlier than 2010-02-18 08:00 |
| 42 | **Iteration 7: Release #6: Automated Composite Image Compilation** | 2010-02-04 17:30 → 2010-02-18 14:30 (+14d) | 2010-02-18 08:00 → 2010-02-25 08:00 (+7d) | 3.5d → 2.12d |  | 9.38d → 5.5d |  |  |
| 43 | **Web system** | 2010-02-04 17:30 → 2010-02-18 14:30 (+14d) | 2010-02-10 15:00 → 2010-02-24 15:00 (+14d) | 1d → 1.75d |  | 11.88d → 5.88d |  |  |
| 44 | Install mailing server | 2010-02-04 17:30 → 2010-02-18 14:30 (+14d) | 2010-02-04 18:30 → 2010-02-18 16:30 (+14d) | 1h → 2h |  | 12.62d → 5.88d | none → 40 |  |
| 45 | Implement Oracle PL/SQL procedure to handle email notifications | 2010-02-04 17:30 → 2010-02-18 16:30 (+14d) | 2010-02-10 15:00 → 2010-02-24 15:00 (+14d) | 4h → 5h |  | 11.88d → 5.88d | none → 44 |  |
| 46 | **Telescope-controlling application** | 2010-02-04 17:30 → 2010-02-18 14:30 (+14d) | 2010-02-10 15:30 → 2010-02-24 15:30 (+14d) | 1.12d → 1.88d |  | 11.75d → 5.75d |  |  |
| 47 | Implement functionality for compiling composite images | 2010-02-04 17:30 → 2010-02-18 14:30 (+14d) | 2010-02-10 15:30 → 2010-02-22 14:30 (+12d) |  |  | 11.75d → 5.75d | 30 → 40 |  |
| 48 | Research image recognition options | 2010-02-04 17:30 → 2010-02-22 14:30 (+18d) | 2010-02-08 16:00 → 2010-02-24 15:30 (+16d) |  |  | 12.12d → 5.75d | none → 47 |  |
| 49 | **Documentation** | 2010-02-04 17:30 → 2010-02-18 14:30 (+14d) | 2010-02-18 08:00 → 2010-02-22 16:00 (+4d) | 3.5d → 1.5d |  | 9.38d → 6.12d |  |  |
| 50 | Update documentation | 2010-02-04 17:30 → 2010-02-18 14:30 (+14d) | 2010-02-10 15:00 → 2010-02-18 18:30 (+8d) |  |  | 11.88d → 6.12d | none → 40 |  |
| 51 | Create sequence diagrams for web application | 2010-02-04 17:30 → 2010-02-22 14:00 (+18d) | 2010-02-08 15:00 → 2010-02-22 16:00 (+14d) |  |  | 12.38d → 6.12d | none → 50 |  |
| 52 | Release #6: Automated Composite Image Compilation | 2010-02-18 08:00 → 2010-02-25 08:00 (+7d) | 2010-02-18 08:00 → 2010-02-25 08:00 (+7d) |  |  | 9.38d → 5.5d | none → 43, 46, 49 | constraint start no earlier than 2010-02-18 08:00 → start no earlier than 2010-02-25 08:00 |
| 54 | **Iteration 8: Release #7: Image Recognition** | 2010-02-18 14:30 → 2010-02-25 14:30 (+7d) | 2010-03-04 08:00 → 2010-03-04 15:30 | 4.25d → 2.38d |  | 7.5d → 5.5d |  |  |
| 55 | **Web system** | 2010-02-22 16:00 → 2010-03-01 16:00 (+7d) | 2010-02-25 15:30 → 2010-03-04 15:30 (+7d) |  |  | 9.38d → 5.5d |  |  |
| 56 | Implement manual telescope positioning | 2010-02-22 16:00 → 2010-03-01 16:00 (+7d) | 2010-02-25 15:30 → 2010-03-04 15:30 (+7d) |  |  | 9.38d → 5.5d |  |  |
| 57 | **Telescope-controlling application** | 2010-02-18 14:30 → 2010-02-25 14:30 (+7d) | 2010-02-24 16:00 → 2010-03-03 16:00 (+7d) |  |  | 9.38d → 5.5d |  |  |
| 58 | Implement functionality for image recognition | 2010-02-18 14:30 → 2010-02-25 14:30 (+7d) | 2010-02-22 16:00 → 2010-03-01 16:00 (+7d) |  |  | 9.75d → 5.88d | none → 52 |  |
| 59 | Integrate image recognition program with telescope-controlling application | 2010-02-22 16:00 → 2010-03-01 16:00 (+7d) | 2010-02-24 15:30 → 2010-03-03 15:30 (+7d) |  |  | 9.88d → 6d |  |  |
| 60 | Create scheduled email job which will email operators when new objects are found | 2010-02-22 16:00 → 2010-03-01 16:00 (+7d) | 2010-02-24 16:00 → 2010-03-03 16:00 (+7d) |  |  | 9.75d → 5.88d |  |  |
| 61 | Implement ability for streaming images live to the web system | 2010-02-18 14:30 → 2010-02-25 14:30 (+7d) | 2010-02-22 16:00 → 2010-03-01 16:00 (+7d) |  |  | 9.38d → 5.5d |  |  |
| 62 | **Documentation** | 2010-02-18 14:30 → 2010-02-25 14:30 (+7d) | 2010-02-18 18:30 → 2010-02-25 18:30 (+7d) |  |  | 10.75d → 6.88d |  |  |
| 63 | Update documentation | 2010-02-18 14:30 → 2010-02-25 14:30 (+7d) | 2010-02-18 18:30 → 2010-02-25 18:30 (+7d) |  |  | 10.75d → 6.88d | none → 52 |  |
| 64 | Release #7: Image Recognition | 2010-03-04 08:00 → 2010-03-04 15:30 | 2010-03-04 08:00 → 2010-03-04 15:30 |  |  | 7.5d → 5.5d |  | constraint start no earlier than 2010-03-04 08:00 → none |
| 66 | **Iteration 9: Release #8: Refactored Final Release** | 2010-03-04 14:30 → 2010-03-04 15:30 |  | 12.12d → 11.88d |  |  |  |  |
| 67 | Final refactoring | 2010-03-04 14:30 → 2010-03-04 15:30 | 2010-03-08 15:00 → 2010-03-08 16:00 |  |  | 7.5d → 5.5d | none → 64 |  |
| 68 | Changes to schedule log filtering for mobile device views | 2010-03-08 15:00 → 2010-03-08 16:00 | 2010-03-08 16:00 → 2010-03-10 15:00 (+2d) |  |  | 7.5d → 5.5d |  |  |
| 69 | **Deployment and End Testing** | 2010-03-08 16:00 → 2010-03-10 15:00 (+2d) | 2010-03-11 15:00 → 2010-03-17 16:30 (+6d) | 0.75d → 2.5d |  | 7.5d → 5.5d |  |  |
| 70 | Fix functional tests | 2010-03-08 16:00 → 2010-03-10 15:00 (+2d) | 2010-03-11 15:00 → 2010-03-11 16:00 |  |  | 7.5d → 5.5d | none → 64 |  |
| 71 | System testing | 2010-03-08 16:00 → 2010-03-11 16:00 (+3d) | 2010-03-10 16:00 → 2010-03-11 18:00 (+1d) |  |  | 7.75d → 5.5d | none → 70 |  |
| 72 | Integration testing | 2010-03-08 16:00 → 2010-03-11 18:00 (+3d) | 2010-03-11 15:00 → 2010-03-15 16:30 (+4d) |  |  | 7.5d → 5.5d | none → 71 |  |
| 73 | Final user acceptance test | 2010-03-08 16:00 → 2010-03-17 14:30 (+9d) | 2010-03-10 15:00 → 2010-03-17 15:30 (+7d) |  |  | 8d → 5.5d | none → 72 |  |
| 74 | Deploy systems to production environment | 2010-03-08 16:00 → 2010-03-17 15:30 (+9d) | 2010-03-10 15:00 → 2010-03-17 16:30 (+7d) |  |  | 8d → 5.5d | none → 73 |  |
| 75 | **Documentation** | 2010-03-11 15:00 → 2010-03-18 14:30 (+7d) | 2010-03-17 15:30 → 2010-03-24 15:00 (+7d) |  |  | 7.5d → 5.5d |  |  |
| 76 | Finalize documentation | 2010-03-11 15:00 → 2010-03-18 14:30 (+7d) | 2010-03-15 16:30 → 2010-03-22 16:00 (+7d) |  |  | 7.5d → 5.5d | none → 64 |  |
| 77 | Compile final metrics and project statistics | 2010-03-17 14:30 → 2010-03-22 16:00 (+5d) | 2010-03-17 15:30 → 2010-03-24 15:00 (+7d) |  |  | 7.5d → 5.5d |  |  |
| 78 | **Final Presentation** | 2010-03-17 15:30 → 2010-03-24 15:00 (+7d) |  | 8.12d → 6.12d |  |  |  |  |
| 79 | Create PowerPoint for final presentation | 2010-03-17 15:30 → 2010-03-24 15:00 (+7d) | 2010-03-18 16:00 → 2010-03-25 15:30 (+7d) |  |  | 7.5d → 5.5d | none → 64 |  |

## Version 8 (saved 2010-02-09)

Note of the change: Robert's changes to plan and change requests for meeting 2

Last finish stays 2010-04-07.

Added:

| ID | Task | Duration | Start | Finish | Predecessors | Resources |
| --- | --- | --- | --- | --- | --- | --- |
| 26 | Telescope parking completed | 0d | 2010-02-11 15:00 | 2010-02-11 15:00 | 25 | Rob; Robert |
| 32 | Hardware interfacing completed | 0d | 2010-02-11 17:30 | 2010-02-11 17:30 | 31, 13, 14, 30 | Rob; Robert |
| 54 | All documentation created | 0d | 2010-02-22 16:00 | 2010-02-22 16:00 | 19, 36, 37, 38, 39, 40, 41, 53 | Rob; Robert |
| 64 | Mail notification completed | 0d | 2010-03-03 16:00 | 2010-03-03 16:00 | 46, 47, 63 | Rob; Robert |

Changed:

| ID | Task | Start | Finish | Total float | Predecessors | Other |
| --- | --- | --- | --- | --- | --- | --- |
| 24 | Integrate libraries (which have celestial objects of interest) to web site | 2010-02-04 17:30 → 2010-02-04 14:30 | 2010-02-11 15:00 → 2010-02-08 16:00 (-3d) |  | 25 → none |  |
| 25 | Add scheduled job for parking telescope | 2010-02-04 14:30 → 2010-02-08 16:00 (+4d) | 2010-02-04 17:30 → 2010-02-11 15:00 (+7d) |  | 13 → 24, 13 |  |
| 27 | Add pagination to tables (e.g. schedule log table) |  |  |  | 24 → 26 |  |
| 29 | **Telescope-controlling application** | 2010-02-04 14:30 → 2010-02-10 14:30 (+6d) | 2010-02-08 15:00 → 2010-02-11 17:30 (+3d) | 8.75d → 7.12d |  |  |
| 30 | Create test program to handle image taking with specific parameters | 2010-02-04 14:30 → 2010-02-10 14:30 (+6d) | 2010-02-08 14:30 → 2010-02-11 17:00 (+3d) | 8.75d → 7.12d | 20 → none | constraint none → start no earlier than 2010-02-10 08:00 |
| 31 | Integrate camera to telescope-controlling application | 2010-02-08 14:30 → 2010-02-11 17:00 (+3d) | 2010-02-08 15:00 → 2010-02-11 17:30 (+3d) | 8.75d → 7.12d |  |  |

## Version 9 (saved 2010-02-23)

Note of the change: updated docs for meeting 3

Last finish stays 2010-04-07. Complete tasks 11 → 22.

Added:

| ID | Task | Duration | Start | Finish | Predecessors | Constraint | Resources |
| --- | --- | --- | --- | --- | --- | --- | --- |
| 27 | Bug fixing and refactoring | 3h | 2010-02-15 14:00 A | 2010-02-17 15:00 A | 26 |  | Rob |
| 28 | Schedule duration validations | 4h | 2010-02-17 15:00 A | 2010-02-18 17:00 A | 27 |  | Rob |
| 29 | Search forms to schedule index and user index | 1.5h | 2010-02-18 17:00 A | 2010-02-18 18:30 A | 28 |  | Rob |
| 30 | Add calendars to the schedule index and form | 1.5h | 2010-02-22 14:00 A | 2010-02-22 15:30 A | 29 |  | Rob |
| 31 | Online help enhancements | 45min | 2010-02-22 15:30 A | 2010-02-22 16:15 A | 30 |  | Rob |
| 33 | Add celestial object inputs into the application | 1h | 2010-02-04 14:30 | 2010-02-04 15:30 |  |  | Robert |
| 48 | Add validations for celestial object/coordinates | 1.75h | 2010-03-03 14:30 | 2010-03-03 16:15 |  | start no earlier than 2010-03-03 08:00 | Rob |
| 49 | Add mobile device views and additional functionality | 4h | 2010-03-03 14:30 | 2010-03-04 16:30 |  | start no earlier than 2010-03-03 08:00 | Rob |

Changed:

| ID | Task | Start | Finish | Duration | Complete | Total float | Predecessors | Other |
| --- | --- | --- | --- | --- | --- | --- | --- | --- |
| 1 | **Iteration 5: Release #4: Automated Scheduling and Telescope Positioning** |  | 2010-02-04 08:00 A |  | 73% → 100% | 5.75d → none |  |  |
| 2 | **Web system** |  | 2010-01-20 16:00 A |  | 79% → 100% | 10.12d → none |  |  |
| 8 | Install Oracle client on web server | 2010-01-06 14:30 A | 2010-01-06 15:30 A |  | 0% → 100% | 14.5d → none |  |  |
| 10 | Create triggers/batch file to run application | 2010-01-18 16:00 A | 2010-01-20 16:00 A |  | 0% → 100% | 10.12d → none |  |  |
| 16 | **Documentation** |  | 2010-01-07 17:30 A |  | 43% → 100% | 13.5d → none |  |  |
| 17 | Documentation updates |  | 2010-01-07 17:30 A |  | 34% → 100% | 13.5d → none |  |  |
| 19 | Release #4: Automated Scheduling and Telescope Positioning | 2010-02-04 08:00 A | 2010-02-04 08:00 A |  | 0% → 100% | 5.75d → none |  |  |
| 21 | **Iteration 6: Release #5: Libraries and GUI Enhancements** | 2010-02-04 14:30 → 2010-02-04 08:00 A | 2010-02-18 08:00 → 2010-03-01 08:00 (+11d) | 4.25d → 7.38d | 0% → 33% | 5.75d → 2.12d |  | was named Iteration 6: Release #5: Automated Image Gathering |
| 22 | **Web system** | 2010-02-04 14:30 A | 2010-02-17 16:30 → 2010-03-01 08:00 (+12d) | 4.25d → 7.38d | 0% → 78% | 5.75d → 2.12d |  |  |
| 23 | Integrate libraries (which have celestial objects of interest) to web site | 2010-02-04 14:30 A | 2010-02-08 16:00 A |  | 0% → 100% | 5.75d → none |  |  |
| 24 | Add scheduled job for parking telescope | 2010-02-08 16:00 → 2010-02-22 16:00 (+14d) | 2010-02-11 15:00 → 2010-02-25 17:00 (+14d) | 3h → 5h |  | 5.75d → 2.5d |  | constraint none → finish no earlier than 2010-02-25 17:00 |
| 25 | Telescope parking completed | 2010-02-11 15:00 → 2010-03-01 08:00 (+18d) | 2010-02-11 15:00 → 2010-03-01 08:00 (+18d) |  |  | 5.75d → 2.12d |  | constraint none → start no earlier than 2010-03-01 08:00 |
| 26 | Add pagination to tables (e.g. schedule log table) | 2010-02-11 15:00 → 2010-02-11 17:00 A | 2010-02-15 15:30 → 2010-02-11 18:30 A (-4d) | 5h → 1.5h | 0% → 100% | 5.75d → none | 25 → none |  |
| 32 | **Telescope-controlling application** | 2010-02-10 14:30 → 2010-02-04 08:00 (-6d) | 2010-02-11 17:30 → 2010-02-04 15:30 (-7d) | 1.25d → 0.25d |  | 7.12d → 9.25d |  |  |
| 34 | Hardware interfacing completed | 2010-02-11 17:30 → 2010-02-04 08:00 (-7d) | 2010-02-11 17:30 → 2010-02-04 08:00 (-7d) |  |  | 7.12d → 9.5d |  |  |
| 35 | **Documentation** |  | 2010-02-17 15:30 → 2010-02-24 16:30 (+7d) | 4d → 6.38d |  | 6d → 3.12d |  |  |
| 37 | More metrics gathering | 2010-02-04 14:30 → 2010-02-24 14:30 (+20d) | 2010-02-04 16:30 → 2010-02-24 16:30 (+20d) |  |  | 9.5d → 3.12d |  | constraint none → start no earlier than 2010-02-24 08:00 |
| 38 | Create unit tests for telescope-controlling application | 2010-02-04 14:30 → 2010-02-15 14:00 (+11d) | 2010-02-04 17:00 → 2010-02-15 16:30 (+11d) |  |  | 9.38d → 5.75d | 12 → none | constraint none → start no earlier than 2010-02-15 08:00 |
| 39 | Create class diagram for telescope-controlling application | 2010-02-04 14:30 → 2010-02-17 14:30 (+13d) | 2010-02-04 15:30 → 2010-02-17 15:30 (+13d) |  |  | 7.25d → 3.75d | 17 → none | constraint none → start no earlier than 2010-02-17 08:00 |
| 40 | Create sequence diagrams for telescope-controlling application | 2010-02-04 15:30 → 2010-02-17 15:30 (+13d) | 2010-02-04 17:30 → 2010-02-18 15:30 (+14d) |  |  | 7.25d → 3.75d |  |  |
| 41 | Create system-sequence diagrams | 2010-02-04 17:30 → 2010-02-18 15:30 (+14d) | 2010-02-08 15:00 → 2010-02-18 17:30 (+10d) |  |  | 7.25d → 3.75d |  |  |
| 42 | Create activity diagrams | 2010-02-08 15:00 → 2010-02-18 17:30 (+10d) | 2010-02-10 16:00 → 2010-02-22 16:00 (+12d) |  |  | 7.25d → 3.75d |  |  |
| 43 | Create state diagrams | 2010-02-10 16:00 → 2010-02-04 14:30 (-6d) | 2010-02-11 17:00 → 2010-02-04 17:30 (-7d) |  |  | 7.25d → 8.75d | 42 → none |  |
| 44 | Release #5: Libraries and GUI Enhancements | 2010-02-18 08:00 → 2010-03-01 08:00 (+11d) | 2010-02-18 08:00 → 2010-03-01 08:00 (+11d) |  |  | 5.75d → 2.12d |  | was named Release #5: Automated Image Gathering; constraint start no earlier than 2010-02-18 08:00 → start no earlier than 2010-03-01 08:00 |
| 46 | **Iteration 7: Release #6: Automated Composite Image Compilation** | 2010-02-18 14:30 → 2010-03-01 14:00 (+11d) | 2010-02-25 08:00 → 2010-03-11 17:30 (+14d) | 2.12d → 4d |  | 5.5d → 0d |  |  |
| 47 | **Web system** | 2010-02-18 14:30 → 2010-03-01 14:00 (+11d) | 2010-02-24 15:00 → 2010-03-11 17:30 (+15d) | 1.75d → 4d |  | 5.88d → 0d |  |  |
| 50 | Add image copying to batch file/job scheduling | 2010-02-15 15:30 → 2010-03-01 14:00 (+14d) | 2010-02-17 16:30 → 2010-03-03 16:00 (+14d) | 3h → 4h |  | 5.75d → 3d | 26 → none | constraint none → start no earlier than 2010-02-04 08:00 |
| 51 | Install mail server | 2010-02-18 14:30 → 2010-03-04 14:30 (+14d) | 2010-02-18 16:30 → 2010-03-04 16:30 (+14d) |  |  | 5.88d → 1.12d |  | was named Install mailing server; constraint none → start no earlier than 2010-03-04 08:00 |
| 52 | Implement Oracle PL/SQL procedure to handle email notifications | 2010-02-18 16:30 → 2010-03-10 14:30 (+20d) | 2010-02-24 15:00 → 2010-03-11 17:30 (+15d) |  |  | 5.88d → 0d |  | constraint none → start no earlier than 2010-03-10 08:00 |
| 53 | **Telescope-controlling application** | 2010-02-18 14:30 → 2010-03-04 14:30 (+14d) | 2010-02-24 15:30 → 2010-03-10 15:30 (+14d) |  |  | 5.75d → 1d |  |  |
| 56 | Implement functionality for compiling composite images | 2010-02-18 14:30 → 2010-03-04 14:30 (+14d) | 2010-02-22 14:30 → 2010-03-08 14:30 (+14d) |  |  | 5.75d → 1d | 44 → 55 | constraint none → start no earlier than 2010-03-04 08:00 |
| 57 | Research image recognition options | 2010-02-22 14:30 → 2010-03-08 14:30 (+14d) | 2010-02-24 15:30 → 2010-03-10 15:30 (+14d) |  |  | 5.75d → 1d |  |  |
| 58 | **Documentation** | 2010-02-18 14:30 → 2010-03-04 14:30 (+14d) | 2010-02-22 16:00 → 2010-03-08 16:00 (+14d) |  |  | 6.12d → 1.38d |  |  |
| 59 | Draft acceptance test | 2010-01-06 14:30 → 2010-03-04 14:30 (+57d) | 2010-01-06 15:30 → 2010-03-04 15:30 (+57d) |  |  | 14.5d → 2.62d | none → 42 | constraint none → start no earlier than 2010-03-04 08:00; resources Rob → Robert |
| 60 | Update documentation | 2010-02-18 14:30 → 2010-03-04 14:30 (+14d) | 2010-02-18 18:30 → 2010-03-04 18:30 (+14d) |  |  | 6.12d → 1.38d |  | constraint none → start no earlier than 2010-03-04 08:00 |
| 61 | Create sequence diagrams for web application | 2010-02-22 14:00 → 2010-03-08 14:00 (+14d) | 2010-02-22 16:00 → 2010-03-08 16:00 (+14d) |  |  | 6.12d → 1.38d |  |  |
| 62 | All documentation created | 2010-02-22 16:00 → 2010-03-08 16:00 (+14d) | 2010-02-22 16:00 → 2010-03-08 16:00 (+14d) |  |  | 6.12d → 1.38d |  |  |
| 63 | Release #6: Automated Composite Image Compilation | 2010-02-25 08:00 → 2010-03-11 17:30 (+14d) | 2010-02-25 08:00 → 2010-03-11 17:30 (+14d) |  |  | 5.5d → 0d |  |  |
| 65 | **Iteration 8: Release #7: Image Recognition** | 2010-02-25 14:30 → 2010-03-11 17:30 (+14d) | 2010-03-04 15:30 → 2010-03-24 15:30 (+20d) | 2.38d → 3.25d |  | 5.5d → 0d |  |  |
| 66 | **Web system** | 2010-03-01 16:00 → 2010-03-18 15:00 (+17d) | 2010-03-04 15:30 → 2010-03-24 15:30 (+20d) | 0.88d → 1.75d |  | 5.5d → 0d |  |  |
| 67 | Implement manual telescope positioning | 2010-03-01 16:00 → 2010-03-18 15:00 (+17d) | 2010-03-04 15:30 → 2010-03-24 15:30 (+20d) | 3.5h → 7h |  | 5.5d → 0d |  |  |
| 68 | **Telescope-controlling application** | 2010-02-25 14:30 → 2010-03-11 17:30 (+14d) | 2010-03-03 16:00 → 2010-03-18 17:00 (+15d) |  |  | 5.5d → 0d |  |  |
| 69 | Implement functionality for image recognition | 2010-02-25 14:30 → 2010-03-11 17:30 (+14d) | 2010-03-01 16:00 → 2010-03-18 15:00 (+17d) |  |  | 5.88d → 1.25d |  |  |
| 70 | Integrate image recognition program with telescope-controlling application | 2010-03-01 16:00 → 2010-03-18 15:00 (+17d) | 2010-03-03 15:30 → 2010-03-18 16:30 (+15d) |  |  | 6d → 1.38d |  |  |
| 71 | Create scheduled email job which will email operators when new objects are found | 2010-03-01 16:00 → 2010-03-18 15:00 (+17d) | 2010-03-03 16:00 → 2010-03-18 17:00 (+15d) |  |  | 5.88d → 1.25d |  |  |
| 72 | Mail notification completed | 2010-03-03 16:00 → 2010-03-18 17:00 (+15d) | 2010-03-03 16:00 → 2010-03-18 17:00 (+15d) |  |  | 5.88d → 1.25d |  |  |
| 73 | Implement ability for streaming images live to the web system | 2010-02-25 14:30 → 2010-03-11 17:30 (+14d) | 2010-03-01 16:00 → 2010-03-18 15:00 (+17d) |  |  | 5.5d → 0d |  |  |
| 74 | **Documentation** | 2010-02-25 14:30 → 2010-03-11 17:30 (+14d) | 2010-02-25 18:30 → 2010-03-17 15:00 (+20d) |  |  | 6.88d → 2.25d |  |  |
| 75 | Update documentation | 2010-02-25 14:30 → 2010-03-11 17:30 (+14d) | 2010-02-25 18:30 → 2010-03-17 15:00 (+20d) |  |  | 6.88d → 2.25d |  |  |
| 76 | Release #7: Image Recognition | 2010-03-04 15:30 → 2010-03-24 15:30 (+20d) | 2010-03-04 15:30 → 2010-03-24 15:30 (+20d) |  |  | 5.5d → 0d |  |  |
| 78 | **Iteration 9: Release #8: Refactored Final Release** | 2010-03-04 15:30 → 2010-03-24 15:30 (+20d) | 2010-04-07 08:00 → 2010-04-07 16:00 | 11.88d → 6.38d |  |  |  |  |
| 79 | Final refactoring | 2010-03-04 15:30 → 2010-03-24 15:30 (+20d) | 2010-03-08 16:00 → 2010-03-25 18:30 (+17d) |  |  | 5.5d → 0d |  |  |
| 80 | Changes to schedule log filtering for mobile device views | 2010-03-08 16:00 → 2010-03-29 14:00 (+21d) | 2010-03-10 15:00 → 2010-03-29 15:00 (+19d) |  |  | 5.5d → 0d |  |  |
| 81 | **Deployment and End Testing** | 2010-03-10 15:00 → 2010-03-29 15:00 (+19d) | 2010-03-17 16:30 → 2010-04-05 16:30 (+19d) |  |  | 5.5d → 0d |  |  |
| 82 | Fix functional tests | 2010-03-10 15:00 → 2010-03-29 15:00 (+19d) | 2010-03-11 16:00 → 2010-03-31 16:00 (+20d) |  |  | 5.5d → 0d |  |  |
| 83 | System testing | 2010-03-11 16:00 → 2010-03-31 16:00 (+20d) | 2010-03-11 18:00 → 2010-04-01 16:00 (+21d) |  |  | 5.5d → 0d |  |  |
| 84 | Integration testing | 2010-03-11 18:00 → 2010-04-01 16:00 (+21d) | 2010-03-15 16:30 → 2010-04-05 14:30 (+21d) |  |  | 5.5d → 0d |  |  |
| 85 | Final user acceptance test | 2010-03-17 14:30 → 2010-04-05 14:30 (+19d) | 2010-03-17 15:30 → 2010-04-05 15:30 (+19d) |  |  | 5.5d → 0d |  |  |
| 86 | Deploy systems to production environment | 2010-03-17 15:30 → 2010-04-05 15:30 (+19d) | 2010-03-17 16:30 → 2010-04-05 16:30 (+19d) |  |  | 5.5d → 0d |  |  |
| 87 | **Documentation** | 2010-03-18 14:30 → 2010-04-06 08:00 (+19d) | 2010-03-24 15:00 → 2010-04-06 16:00 (+13d) |  |  | 5.5d → 0d |  |  |
| 88 | Finalize documentation | 2010-03-18 14:30 → 2010-04-06 08:00 (+19d) | 2010-03-22 16:00 → 2010-04-06 15:00 (+15d) |  |  | 5.5d → 0d |  |  |
| 89 | Compile final metrics and project statistics | 2010-03-22 16:00 → 2010-04-06 15:00 (+15d) | 2010-03-24 15:00 → 2010-04-06 16:00 (+13d) |  |  | 5.5d → 0d |  |  |
| 90 | **Final Presentation** | 2010-03-24 15:00 → 2010-04-06 16:00 (+13d) | 2010-04-07 08:00 → 2010-04-07 16:00 | 6.12d → 0.62d |  |  |  |  |
| 91 | Create PowerPoint for final presentation | 2010-03-24 15:00 → 2010-04-06 16:00 (+13d) | 2010-03-25 15:30 → 2010-04-07 16:00 (+13d) |  |  | 5.5d → 0d |  |  |
| 92 | Present project to OC faculty and audience | 2010-04-07 08:00 → 2010-04-07 16:00 | 2010-04-07 08:00 → 2010-04-07 16:00 |  |  |  |  |  |
| 93 | Final release | 2010-04-07 08:00 → 2010-04-07 16:00 | 2010-04-07 08:00 → 2010-04-07 16:00 |  |  |  |  |  |

## Version 10 (saved 2010-03-01)

Note of the change: updated docs for meeting 3

Last finish 2010-04-07 → 2010-04-26 (+19d). Complete tasks 22 → 28.

Added:

| ID | Task | Duration | Start | Finish | Predecessors | Constraint |
| --- | --- | --- | --- | --- | --- | --- |
| 87 | Internal presentation | 0d | 2010-04-14 15:30 | 2010-04-14 15:30 | 86 | start no earlier than 2010-04-08 08:00 |
| 89 | Original coding ceases | 0d | 2010-04-08 08:00 | 2010-04-08 08:00 |  | start no earlier than 2010-04-08 08:00 |
| 90 | Corrective coding ceases | 0d | 2010-04-20 08:00 | 2010-04-20 08:00 |  | start no earlier than 2010-04-20 08:00 |

Removed: 34 Hardware interfacing completed

Changed:

| ID | Task | Start | Finish | Duration | Complete | Total float | Predecessors | Other |
| --- | --- | --- | --- | --- | --- | --- | --- | --- |
| 20 | **Iteration 6: Release #5: Libraries and GUI Enhancements** | 2010-02-04 08:00 A → 2010-02-04 14:30 A | 2010-03-01 08:00 A |  | 33% → 100% | 2.12d → none |  |  |
| 21 | **Web system** |  | 2010-03-01 08:00 A |  | 78% → 100% | 2.12d → none |  |  |
| 23 | Add scheduled job for parking telescope | 2010-02-22 16:00 A | 2010-02-25 17:00 A |  | 0% → 100% | 2.5d → none |  |  |
| 24 | Telescope parking completed | 2010-03-01 08:00 A | 2010-03-01 08:00 A |  | 0% → 100% | 2.12d → none |  |  |
| 31 | **Telescope-controlling application** | 2010-02-04 08:00 → 2010-02-04 14:30 A | 2010-02-04 15:30 A |  | 0% → 100% | 9.25d → none |  |  |
| 32 | Add celestial object inputs into the application | 2010-02-04 14:30 A | 2010-02-04 15:30 A |  | 0% → 100% | 9.25d → none |  |  |
| 33 | **Documentation** | 2010-02-04 14:30 A | 2010-02-24 16:30 A |  | 0% → 100% | 3.12d → none |  |  |
| 34 | Update documentation | 2010-02-04 14:30 A | 2010-02-17 15:30 A |  | 0% → 100% | 5.5d → none |  |  |
| 35 | Web application metrics gathering | 2010-02-24 14:30 A | 2010-02-24 16:30 A |  | 0% → 100% | 3.12d → none |  | was named More metrics gathering; resources Robert → Rob |
| 36 | Release #5: Libraries and GUI Enhancements | 2010-03-01 08:00 A | 2010-03-01 08:00 A |  | 0% → 100% | 2.12d → none |  |  |
| 37 | **Iteration 7: Release #6: Automated Composite Image Compilation** |  | 2010-03-11 17:30 → 2010-03-18 17:00 (+7d) | 4d → 6d |  | 0d → 5.38d |  |  |
| 44 | **Telescope-controlling application** | 2010-03-04 14:30 → 2010-03-01 14:00 (-3d) | 2010-03-10 15:30 → 2010-03-08 15:00 (-2d) | 1.88d → 2.38d |  | 1d → 9d |  |  |
| 45 | Create test program to handle image taking with specific parameters | 2010-02-10 14:30 → 2010-03-01 14:00 (+19d) | 2010-02-11 17:00 → 2010-03-03 16:30 (+20d) |  |  | 6.62d → 9d |  |  |
| 46 | Integrate camera to telescope-controlling application | 2010-02-11 17:00 → 2010-03-04 14:30 (+21d) | 2010-02-11 17:30 → 2010-03-04 15:00 (+21d) |  |  | 6.62d → 9d |  |  |
| 47 | Implement functionality for compiling composite images | 2010-03-04 14:30 → 2010-03-04 15:00 | 2010-03-08 14:30 → 2010-03-08 15:00 |  |  | 1d → 9d |  |  |
| 48 | **Documentation** |  | 2010-03-08 16:00 → 2010-03-18 17:00 (+10d) | 1.5d → 4.88d |  | 1.38d → 5.38d |  |  |
| 49 | Draft acceptance test | 2010-03-04 14:30 → 2010-03-11 16:00 (+7d) | 2010-03-04 15:30 → 2010-03-11 17:00 (+7d) |  |  | 2.62d → 7.5d |  |  |
| 51 | Create state diagrams | 2010-02-04 14:30 → 2010-03-08 14:00 (+32d) | 2010-02-04 17:30 → 2010-03-10 15:00 (+34d) |  |  | 8.75d → 5.38d | none → 50 |  |
| 52 | Create activity diagrams | 2010-02-18 17:30 → 2010-03-10 15:00 (+20d) | 2010-02-22 16:00 → 2010-03-11 16:00 (+17d) |  |  | 3.75d → 5.38d | 53 → 51 |  |
| 53 | Create system-sequence diagrams | 2010-02-18 15:30 → 2010-03-11 16:00 (+21d) | 2010-02-18 17:30 → 2010-03-11 18:00 (+21d) |  |  | 3.75d → 5.38d | 54 → 52 | resources Robert → Rob |
| 54 | Create sequence diagrams for telescope-controlling application | 2010-02-17 15:30 → 2010-03-11 18:00 (+22d) | 2010-02-18 15:30 → 2010-03-15 15:30 (+25d) |  |  | 3.75d → 5.38d | 55 → 53 |  |
| 55 | Create class diagram for telescope-controlling application | 2010-02-17 14:30 → 2010-03-15 15:30 (+26d) | 2010-02-17 15:30 → 2010-03-15 16:30 (+26d) |  |  | 3.75d → 5.38d | none → 54 |  |
| 56 | Create unit tests for telescope-controlling application | 2010-02-15 14:00 → 2010-03-17 14:30 (+30d) | 2010-02-15 16:30 → 2010-03-18 15:00 (+31d) |  |  | 5.75d → 5.38d | none → 55 |  |
| 57 | Create sequence diagrams for web application | 2010-03-08 14:00 → 2010-03-18 15:00 (+10d) | 2010-03-08 16:00 → 2010-03-18 17:00 (+10d) |  |  | 1.38d → 5.38d | 50 → 56 |  |
| 58 | All documentation finished | 2010-03-08 16:00 → 2010-03-18 17:00 (+10d) | 2010-03-08 16:00 → 2010-03-18 17:00 (+10d) |  |  | 1.38d → 5.38d |  | was named All documentation created |
| 59 | Release #6: Automated Composite Image Compilation | 2010-03-11 17:30 → 2010-03-18 17:00 (+7d) | 2010-03-11 17:30 → 2010-03-18 17:00 (+7d) |  |  | 0d → 5.38d |  |  |
| 60 | **Iteration 8: Release #7: Image Recognition** | 2010-03-11 17:30 → 2010-03-18 17:00 (+7d) | 2010-03-24 15:30 → 2010-03-31 15:00 (+7d) |  |  | 0d → 5.38d |  |  |
| 61 | **Web system** | 2010-03-18 15:00 → 2010-03-25 14:30 (+7d) | 2010-03-24 15:30 → 2010-03-31 15:00 (+7d) |  |  | 0d → 5.38d |  |  |
| 62 | Implement manual telescope positioning | 2010-03-18 15:00 → 2010-03-25 14:30 (+7d) | 2010-03-24 15:30 → 2010-03-31 15:00 (+7d) |  |  | 0d → 5.38d |  |  |
| 63 | **Telescope-controlling application** | 2010-03-11 17:30 → 2010-03-18 17:00 (+7d) | 2010-03-18 17:00 → 2010-03-25 16:30 (+7d) |  |  | 0d → 5.38d |  |  |
| 64 | Research image recognition options | 2010-03-08 14:30 → 2010-03-18 17:00 (+10d) | 2010-03-10 15:30 → 2010-03-22 15:30 (+12d) |  |  | 1d → 7.88d | 47 → none |  |
| 65 | Implement functionality for image recognition | 2010-03-11 17:30 → 2010-03-18 17:00 (+7d) | 2010-03-18 15:00 → 2010-03-24 16:30 (+6d) |  |  | 1.25d → 6.62d |  |  |
| 66 | Integrate image recognition program with telescope-controlling application | 2010-03-18 15:00 → 2010-03-25 14:30 (+7d) | 2010-03-18 16:30 → 2010-03-25 16:00 (+7d) |  |  | 1.38d → 6.75d |  |  |
| 67 | Create scheduled email job which will email operators when new objects are found | 2010-03-18 15:00 → 2010-03-25 14:30 (+7d) | 2010-03-18 17:00 → 2010-03-25 16:30 (+7d) |  |  | 1.25d → 6.62d |  |  |
| 68 | Mail notification completed | 2010-03-18 17:00 → 2010-03-25 16:30 (+7d) | 2010-03-18 17:00 → 2010-03-25 16:30 (+7d) |  |  | 1.25d → 6.62d |  |  |
| 69 | Implement ability for streaming images live to the web system | 2010-03-11 17:30 → 2010-03-18 17:00 (+7d) | 2010-03-18 15:00 → 2010-03-24 16:30 (+6d) |  |  | 0d → 5.38d |  |  |
| 70 | **Documentation** | 2010-03-11 17:30 → 2010-03-18 17:00 (+7d) | 2010-03-17 15:00 → 2010-03-22 16:30 (+5d) |  |  | 2.25d → 7.62d |  |  |
| 71 | Update documentation | 2010-03-11 17:30 → 2010-03-18 17:00 (+7d) | 2010-03-17 15:00 → 2010-03-22 16:30 (+5d) |  |  | 2.25d → 7.62d |  |  |
| 72 | Release #7: Image Recognition | 2010-03-24 15:30 → 2010-03-31 15:00 (+7d) | 2010-03-24 15:30 → 2010-03-31 15:00 (+7d) |  |  | 0d → 5.38d |  |  |
| 73 | **Iteration 9: Release #8: Refactored Final Release** | 2010-03-24 15:30 → 2010-03-31 15:00 (+7d) | 2010-04-07 16:00 → 2010-04-26 08:00 (+19d) | 6.38d → 11.75d |  |  |  |  |
| 74 | Final refactoring | 2010-03-24 15:30 → 2010-03-31 15:00 (+7d) | 2010-03-25 18:30 → 2010-04-01 18:00 (+7d) |  |  | 0d → 5.38d |  |  |
| 75 | Changes to schedule log filtering for mobile device views | 2010-03-29 14:00 → 2010-04-01 18:00 (+3d) | 2010-03-29 15:00 → 2010-04-05 14:30 (+7d) |  |  | 0d → 5.38d |  |  |
| 76 | **Deployment and End Testing** | 2010-03-29 15:00 → 2010-04-05 14:30 (+7d) | 2010-04-05 16:30 → 2010-04-06 17:00 (+1d) |  |  | 0d → 5.38d |  |  |
| 77 | Fix functional tests | 2010-03-29 15:00 → 2010-04-05 14:30 (+7d) | 2010-03-31 16:00 → 2010-04-06 09:00 (+6d) |  |  | 0d → 5.38d |  |  |
| 78 | System testing | 2010-03-31 16:00 → 2010-04-06 09:00 (+6d) | 2010-04-01 16:00 → 2010-04-06 11:00 (+5d) |  |  | 0d → 5.38d |  |  |
| 79 | Integration testing | 2010-04-01 16:00 → 2010-04-06 11:00 (+5d) | 2010-04-05 14:30 → 2010-04-06 15:00 (+1d) |  |  | 0d → 5.38d |  |  |
| 80 | Final user acceptance test | 2010-04-05 14:30 → 2010-04-06 15:00 (+1d) | 2010-04-05 15:30 → 2010-04-06 16:00 (+1d) |  |  | 0d → 5.38d |  |  |
| 81 | Deploy systems to production environment | 2010-04-05 15:30 → 2010-04-06 16:00 (+1d) | 2010-04-05 16:30 → 2010-04-06 17:00 (+1d) |  |  | 0d → 5.38d |  |  |
| 82 | **Documentation** | 2010-04-06 08:00 → 2010-04-07 14:30 (+1d) | 2010-04-06 16:00 → 2010-04-12 15:00 (+6d) |  |  | 0d → 5.38d |  |  |
| 83 | Finalize documentation | 2010-04-06 08:00 → 2010-04-07 14:30 (+1d) | 2010-04-06 15:00 → 2010-04-08 18:30 (+2d) |  |  | 0d → 5.38d |  |  |
| 84 | Compile final metrics and project statistics | 2010-04-06 15:00 → 2010-04-12 14:00 (+6d) | 2010-04-06 16:00 → 2010-04-12 15:00 (+6d) |  |  | 0d → 5.38d |  |  |
| 85 | **Final Presentation** | 2010-04-06 16:00 → 2010-04-12 15:00 (+6d) | 2010-04-07 16:00 → 2010-04-26 08:00 (+19d) | 0.62d → 6d |  |  |  |  |
| 86 | Create PowerPoint for final presentation | 2010-04-06 16:00 → 2010-04-12 15:00 (+6d) | 2010-04-07 16:00 → 2010-04-14 15:30 (+7d) |  |  | 0d → 5.38d | 72 → none |  |
| 88 | Present project to OC faculty and audience | 2010-04-07 16:00 → 2010-04-26 08:00 (+19d) | 2010-04-07 16:00 → 2010-04-26 08:00 (+19d) |  |  |  | 86 → 87 | constraint start no earlier than 2010-04-07 08:00 → start no earlier than 2010-04-26 08:00 |
| 91 | Final release | 2010-04-07 16:00 → 2010-04-26 08:00 (+19d) | 2010-04-07 16:00 → 2010-04-26 08:00 (+19d) |  |  |  | 85, 76, 82 → none | constraint start no earlier than 2010-03-18 08:00 → start no earlier than 2010-04-26 08:00 |

## Version 11 (saved 2010-03-09)

Note of the change: user's guide changes

Last finish stays 2010-04-26.

Added:

| ID | Task | Duration | Start | Finish | Resources |
| --- | --- | --- | --- | --- | --- |
| 41 | Update and refactor online help | 3h | 2010-03-01 14:00 | 2010-03-03 15:00 | Rob |

## Version 12 (saved 2010-03-10)

Note of the change: changes for meeting 4

Last finish stays 2010-04-26.

Added:

| ID | Task | Duration | Start | Finish | Constraint | Resources |
| --- | --- | --- | --- | --- | --- | --- |
| 41 | Fix bug with testing environment | 3h | 2010-03-01 14:00 | 2010-03-03 15:00 |  | Rob |
| 42 | Add administration section to online help | 1h | 2010-03-01 14:00 | 2010-03-01 15:00 |  | Rob |
| 57 | Form improvements (on mobile devices) | 2h | 2010-03-18 14:30 | 2010-03-18 16:30 |  | Rob |
| 58 | Create rake task for image copying | 4h | 2010-03-18 14:30 | 2010-03-18 18:30 | start no earlier than 2010-02-04 08:00 | Rob |
| 59 | Integrate camera values to camera calls | 2h | 2010-03-18 14:30 | 2010-03-18 16:30 |  | Rob |
| 60 | Fix bug with testing environment | 2h | 2010-03-18 14:30 | 2010-03-18 16:30 |  | Rob |

Removed: 42 Add image copying to batch file/job scheduling; 43 Install mail server; 44 Implement Oracle PL/SQL procedure to handle email notifications; 45 Telescope-controlling application; 63 Implement manual telescope positioning; 65 Research image recognition options; 66 Implement functionality for image recognition; 67 Integrate image recognition program with telescope-controlling application; 68 Create scheduled email job which will email operators when new objects are found; 69 Mail notification completed; 70 Implement ability for streaming images live to the web system

Changed:

| ID | Task | Start | Finish | Duration | Total float | Predecessors | Other |
| --- | --- | --- | --- | --- | --- | --- | --- |
| 1 | **Iteration 5: Automated Scheduling and Telescope Positioning** |  |  |  |  |  | was named Iteration 5: Release #4: Automated Scheduling and Telescope Positioning |
| 19 | Release #5: Automated Scheduling and Telescope Positioning |  |  |  |  |  | was named Release #4: Automated Scheduling and Telescope Positioning |
| 20 | **Iteration 6: Libraries and GUI Enhancements** |  |  |  |  |  | was named Iteration 6: Release #5: Libraries and GUI Enhancements |
| 36 | Release #6: Libraries and GUI Enhancements |  |  |  |  |  | was named Release #5: Libraries and GUI Enhancements |
| 37 | **Iteration 7: Mobile Views** |  | 2010-03-18 17:00 → 2010-03-17 16:30 (-1d) | 6d → 5.38d | 0.62d → 6.88d |  | was named Iteration 7: Release #6: Automated Composite Image Compilation |
| 38 | **Web system** |  | 2010-03-11 17:30 → 2010-03-04 16:30 (-7d) | 4d → 1.62d | 0.62d → 10.62d |  |  |
| 39 | Add validations for celestial object/coordinates |  | 2010-03-03 16:15 → 2010-03-04 15:00 (+1d) | 1.75h → 2.5h | 2.94d → 11d |  |  |
| 43 | Refactor online help |  | 2010-03-03 15:00 → 2010-03-01 16:00 (-2d) | 3h → 2h | 10.62d → 11.75d |  | was named Update and refactor online help |
| 44 | **Documentation** | 2010-03-04 14:30 → 2010-03-01 14:00 (-3d) | 2010-03-18 17:00 → 2010-03-17 16:30 (-1d) | 4.88d → 5.38d | 5.38d → 6.88d |  |  |
| 45 | Draft acceptance test | 2010-03-11 16:00 → 2010-03-11 18:00 | 2010-03-11 17:00 → 2010-03-15 14:30 (+4d) |  | 7.5d → 7.88d |  |  |
| 46 | Update documentation |  | 2010-03-04 18:30 → 2010-03-08 16:00 (+4d) | 4h → 6h | 5.38d → 6.88d |  |  |
| 47 | Create state diagrams | 2010-03-08 14:00 → 2010-03-08 16:00 | 2010-03-10 15:00 → 2010-03-11 15:00 (+1d) |  | 5.38d → 6.88d |  |  |
| 48 | Create activity diagrams | 2010-03-10 15:00 → 2010-03-11 15:00 (+1d) | 2010-03-11 16:00 → 2010-03-11 18:00 |  | 5.38d → 6.88d |  |  |
| 49 | Create system-sequence diagrams | 2010-03-11 16:00 → 2010-03-11 18:00 | 2010-03-11 18:00 → 2010-03-15 15:30 (+4d) |  | 5.38d → 6.88d |  |  |
| 50 | Create sequence diagrams for telescope-controlling application | 2010-03-11 18:00 → 2010-03-15 15:30 (+4d) | 2010-03-15 15:30 → 2010-03-17 15:30 (+2d) |  | 5.38d → 6.88d |  |  |
| 51 | Create class diagram for telescope-controlling application | 2010-03-15 15:30 → 2010-03-17 15:30 (+2d) | 2010-03-15 16:30 → 2010-03-17 16:30 (+2d) |  | 5.38d → 6.88d |  |  |
| 52 | Create sequence diagrams for web application | 2010-03-18 15:00 → 2010-03-01 14:00 (-17d) | 2010-03-18 17:00 → 2010-03-01 16:00 (-17d) |  | 5.38d → 11.75d | 65 → none |  |
| 53 | All documentation finished | 2010-03-18 17:00 → 2010-03-17 16:30 (-1d) | 2010-03-18 17:00 → 2010-03-17 16:30 (-1d) |  | 5.38d → 6.88d | 52, 45, 47, 48, 49, 50, 51, 65 → 52, 45, 47, 48, 49, 50, 51 |  |
| 54 | Release #7: Mobile Views | 2010-03-18 17:00 → 2010-03-17 16:30 (-1d) | 2010-03-18 17:00 → 2010-03-17 16:30 (-1d) |  | 5.38d → 6.88d | 38, Telescope-controlling application, 44 → 38, 44 | was named Release #6: Automated Composite Image Compilation; constraint start no earlier than 2010-02-25 08:00 → start no earlier than 2010-03-11 08:00 |
| 55 | **Iteration 8: Image Capturing** | 2010-03-18 17:00 → 2010-03-18 14:30 | 2010-03-31 15:00 → 2010-03-25 15:30 (-6d) | 3.25d → 2.38d | 5.38d → 6.88d |  | was named Iteration 8: Release #7: Image Recognition |
| 56 | **Web system** | 2010-03-25 14:30 → 2010-03-18 14:30 (-7d) | 2010-03-31 15:00 → 2010-03-18 18:30 (-13d) | 1.75d → 1d | 5.38d → 8.25d |  |  |
| 61 | **Telescope-controlling application** | 2010-03-18 17:00 → 2010-03-18 14:30 | 2010-03-25 16:30 → 2010-03-25 15:30 | 2d → 2.38d | 5.38d → 6.88d |  |  |
| 62 | Create test program to handle image taking with specific parameters | 2010-03-01 14:00 → 2010-03-18 14:30 (+17d) | 2010-03-03 16:30 → 2010-03-22 14:30 (+19d) |  | 9d → 6.88d |  |  |
| 63 | Implement functionality for compiling composite images | 2010-03-04 15:00 → 2010-03-22 14:30 (+18d) | 2010-03-08 15:00 → 2010-03-25 15:00 (+17d) |  | 9d → 6.88d | 64 → 62 |  |
| 64 | Integrate camera to telescope-controlling application | 2010-03-04 14:30 → 2010-03-25 15:00 (+21d) | 2010-03-04 15:00 → 2010-03-25 15:30 (+21d) |  | 9d → 6.88d | 62 → 63 |  |
| 65 | Create unit tests for telescope-controlling application | 2010-03-17 14:30 → 2010-03-18 14:30 (+1d) | 2010-03-18 15:00 → 2010-03-18 17:00 |  | 5.38d → 8.62d | 51 → none |  |
| 66 | **Documentation** | 2010-03-18 17:00 → 2010-03-18 14:30 | 2010-03-22 16:30 → 2010-03-18 18:30 (-4d) |  | 7.62d → 8.25d |  |  |
| 67 | Update documentation | 2010-03-18 17:00 → 2010-03-18 14:30 | 2010-03-22 16:30 → 2010-03-18 18:30 (-4d) |  | 7.62d → 8.25d |  |  |
| 68 | Release #8: Image Capturing | 2010-03-31 15:00 → 2010-03-25 15:30 (-6d) | 2010-03-31 15:00 → 2010-03-25 15:30 (-6d) |  | 5.38d → 6.88d |  | was named Release #7: Image Recognition |
| 69 | **Iteration 9: Refactored Final Release** | 2010-03-31 15:00 → 2010-03-25 15:30 (-6d) |  | 11.75d → 13.25d |  |  | was named Iteration 9: Release #8: Refactored Final Release |
| 70 | Final refactoring | 2010-03-31 15:00 → 2010-03-25 15:30 (-6d) | 2010-04-01 18:00 → 2010-03-29 16:00 (-3d) |  | 5.38d → 6.88d |  |  |
| 71 | Changes to schedule log filtering for mobile device views | 2010-04-01 18:00 → 2010-03-29 16:00 (-3d) | 2010-04-05 14:30 → 2010-04-01 15:00 (-4d) | 1h → 3h | 5.38d → 6.38d |  |  |
| 72 | **Deployment and End Testing** | 2010-04-05 14:30 → 2010-04-01 15:00 (-4d) | 2010-04-06 17:00 → 2010-04-06 12:00 |  | 5.38d → 6.38d |  |  |
| 73 | Fix functional tests | 2010-04-05 14:30 → 2010-04-01 15:00 (-4d) | 2010-04-06 09:00 → 2010-04-01 18:00 (-5d) |  | 5.38d → 6.38d |  |  |
| 74 | System testing | 2010-04-06 09:00 → 2010-04-01 18:00 (-5d) | 2010-04-06 11:00 → 2010-04-05 15:30 (-1d) |  | 5.38d → 6.38d |  |  |
| 75 | Integration testing | 2010-04-06 11:00 → 2010-04-05 15:30 (-1d) | 2010-04-06 15:00 → 2010-04-06 10:00 |  | 5.38d → 6.38d |  |  |
| 76 | Final user acceptance test | 2010-04-06 15:00 → 2010-04-06 10:00 | 2010-04-06 16:00 → 2010-04-06 11:00 |  | 5.38d → 6.38d |  |  |
| 77 | Deploy systems to production environment | 2010-04-06 16:00 → 2010-04-06 11:00 | 2010-04-06 17:00 → 2010-04-06 12:00 |  | 5.38d → 6.38d |  |  |
| 78 | **Documentation** | 2010-04-07 14:30 → 2010-04-06 13:00 (-1d) | 2010-04-12 15:00 → 2010-04-08 15:30 (-4d) |  | 5.38d → 6.38d |  |  |
| 79 | Finalize documentation | 2010-04-07 14:30 → 2010-04-06 13:00 (-1d) | 2010-04-08 18:30 → 2010-04-07 16:30 (-1d) |  | 5.38d → 6.38d |  |  |
| 80 | Compile final metrics and project statistics | 2010-04-12 14:00 → 2010-04-08 14:30 (-4d) | 2010-04-12 15:00 → 2010-04-08 15:30 (-4d) |  | 5.38d → 6.38d |  |  |
| 81 | **Final Presentation** | 2010-04-12 15:00 → 2010-04-08 15:30 (-4d) |  | 6d → 7d |  |  |  |
| 82 | Create PowerPoint for final presentation | 2010-04-12 15:00 → 2010-04-08 15:30 (-4d) | 2010-04-14 15:30 → 2010-04-08 18:00 (-6d) |  | 5.38d → 6.38d |  |  |
| 83 | Internal presentation | 2010-04-14 15:30 → 2010-04-08 18:00 (-6d) | 2010-04-14 15:30 → 2010-04-08 18:00 (-6d) |  | 5.38d → 6.38d |  | resources none → Rob; Robert |
| 85 | Original coding ceases |  |  |  |  |  | resources none → Rob; Robert |
| 86 | Corrective coding ceases |  |  |  |  |  | resources none → Rob; Robert |
